# ProjetoFinal1718_001-Planning

Schedule from MS Project, 2018-02-05 to 2018-09-24.

## Calendars

- Standard: Mon-Fri 08:00-12:00, 13:00-17:00; Sat-Sun off.

## Resources

| Resource |
| --- |
| Hugo Filipe Soares Veloso De Barros Curado |
| André Gonçalo Bernardo Nunes |
| Pedro Duarte Neto |
| Patrícia Alexandra Dias De Jesus |
| Ana Catarina Pacheco De Sousa |

## Schedule

| ID | WBS | Task | Type | Duration | Start | Finish | Predecessors | Total slack | Free slack | Constraint | Resources | Work |
| --- | --- | --- | --- | --- | --- | --- | --- | --- | --- | --- | --- | --- |
| 1 | 1 | **Final Project** |  | 165.58d? | 2018-02-05 | 2018-09-24 |  | 0d |  |  |  | 779.8h |
| 2 | 1.1 | **Project Bootstrap** |  | 9.58d? | 2018-02-05 | 2018-02-16 |  | 2.5d | 0d |  |  | 43.7h |
| 3 | 1.1.1 | **Analysys** |  | 2d | 2018-02-05 | 2018-02-06 |  | 2d | 0d |  |  | 3.6h |
| 4 | 1.1.1.1 | Execution |  | 1d | 2018-02-05 | 2018-02-06 |  | 2.5d | 0.5d | finish no earlier than 2018-02-06 | Ana Catarina Pacheco De Sousa [30%] | 2.4h |
| 5 | 1.1.1.2 | Testing |  | 0.5d | 2018-02-06 | 2018-02-06 | 4 | 2d |  | finish no earlier than 2018-02-06 | Pedro Duarte Neto [30%] | 1.2h |
| 6 | 1.1.2 | Analysys Completed | milestone | 0d | 2018-02-06 | 2018-02-06 | 3 | 2d | 0d | start no earlier than 2018-02-06 |  |  |
| 7 | 1.1.3 | **Design** |  | 1.5d | 2018-02-07 | 2018-02-08 | 6 | 2d | 0d |  |  | 4.2h |
| 8 | 1.1.3.1 | Execution |  | 1d | 2018-02-07 | 2018-02-07 |  | 2d | 0d | finish no earlier than 2018-02-06 | Ana Catarina Pacheco De Sousa [30%] | 2.4h |
| 9 | 1.1.3.2 | Testing |  | 0.5d | 2018-02-08 | 2018-02-08 | 8 | 2d |  | finish no earlier than 2018-02-06 | Patrícia Alexandra Dias De Jesus [45%] | 1.8h |
| 10 | 1.1.4 | Design Completed | milestone | 0d | 2018-02-08 | 2018-02-08 | 7 | 2d | 0d | start no earlier than 2018-02-06 |  |  |
| 11 | 1.1.5 | **Implementation** |  | 3d | 2018-02-08 | 2018-02-13 | 10 | 2d | 0d |  |  | 27.3h |
| 12 | 1.1.5.1 | **FrontEnd** |  | 3d | 2018-02-08 | 2018-02-13 |  | 3.5d | 0d |  |  | 12.5h |
| 13 | 1.1.5.1.1 | Docker config |  | 0.5d | 2018-02-08 | 2018-02-08 |  | 3.5d | 0d | finish no earlier than 2018-02-07 | Hugo Filipe Soares Veloso De Barros Curado [35%] | 1.4h |
| 14 | 1.1.5.1.2 | Local noSQL bd setup |  | 1d | 2018-02-09 | 2018-02-09 | 13 | 3.5d | 0d | finish no earlier than 2018-02-07 | André Gonçalo Bernardo Nunes [37.5%] | 3h |
| 15 | 1.1.5.1.3 | Initital MEAN setup |  | 1.5d | 2018-02-12 | 2018-02-13 | 13, 14 | 3.5d |  | finish no earlier than 2018-02-07 | André Gonçalo Bernardo Nunes [37.5%] | 4.5h |
| 16 | 1.1.5.1.4 | Index route defenition |  | 1.5d | 2018-02-08 | 2018-02-09 |  | 5d |  | finish no earlier than 2018-02-07 | Ana Catarina Pacheco De Sousa [30%] | 3.6h |
| 17 | 1.1.5.2 | FrontEnd Completed | milestone | 0d | 2018-02-13 | 2018-02-13 | 12 | 3.5d |  | start no earlier than 2018-02-07 |  |  |
| 18 | 1.1.5.3 | **BackEnd** |  | 3d | 2018-02-08 | 2018-02-13 |  | 3.5d | 0d |  |  | 9.2h |
| 19 | 1.1.5.3.1 | Docker config |  | 0.5d | 2018-02-08 | 2018-02-08 |  | 3.5d | 0d | finish no earlier than 2018-02-07 | Hugo Filipe Soares Veloso De Barros Curado [35%] | 1.4h |
| 20 | 1.1.5.3.2 | Relational DB for each server setup (Cloud Managed) |  | 1d | 2018-02-09 | 2018-02-09 | 19 | 3.5d | 0d | finish no earlier than 2018-02-07 | Pedro Duarte Neto [30%] | 2.4h |
| 21 | 1.1.5.3.3 | CodeIgniter SetUp |  | 1.5d | 2018-02-12 | 2018-02-13 | 20, 19 | 3.5d |  | finish no earlier than 2018-02-08 | Patrícia Alexandra Dias De Jesus [45%] | 5.4h |
| 22 | 1.1.5.4 | BackEnd Completed | milestone | 0d | 2018-02-13 | 2018-02-13 | 18 | 3.5d |  | start no earlier than 2018-02-08 |  |  |
| 23 | 1.1.5.5 | **Networking & Security** |  | 2.5d | 2018-02-08 | 2018-02-12 |  | 2d | 0d |  |  | 5.6h |
| 24 | 1.1.5.5.1 | SSL |  | 0.5d | 2018-02-08 | 2018-02-08 |  | 2d | 0d | finish no earlier than 2018-02-07 | Pedro Duarte Neto [30%] | 1.2h |
| 25 | 1.1.5.5.2 | Load Balancer setup |  | 0.5d | 2018-02-09 | 2018-02-09 | 24 | 5.5d |  | finish no earlier than 2018-02-07 | Patrícia Alexandra Dias De Jesus [45%] | 1.8h |
| 26 | 1.1.5.5.3 | OAUTH |  | 0.5d | 2018-02-12 | 2018-02-12 | 24 | 4d | 0d | finish no earlier than 2018-02-07 | Ana Catarina Pacheco De Sousa [30%] | 1.2h |
| 27 | 1.1.5.5.4 | 2Factor Authentication |  | 0.5d | 2018-02-12 | 2018-02-12 | 24, 26 | 4d |  | finish no earlier than 2018-02-08 | Hugo Filipe Soares Veloso De Barros Curado [35%] | 1.4h |
| 28 | 1.1.5.6 | Networking & Security Completed | milestone | 0d | 2018-02-12 | 2018-02-12 | 23 | 4d |  | start no earlier than 2018-02-07 |  |  |
| 29 | 1.1.6 | Implementation Completed | milestone | 0d | 2018-02-13 | 2018-02-13 | 11 | 6.5d |  | start no earlier than 2018-02-08 |  |  |

| ID | WBS | Task | Type | Duration | Start | Finish | Predecessors | Total slack | Free slack | Constraint | Resources | Work |
| --- | --- | --- | --- | --- | --- | --- | --- | --- | --- | --- | --- | --- |
| 30 | 1.1.7 | **Testing** |  | 2d? | 2018-02-13 | 2018-02-15 | 11 | 3.5d | 0d |  |  | 5.8h |
| 31 | 1.1.7.1 | Building |  | 1d? | 2018-02-13 | 2018-02-14 |  | 3.5d | 0d | finish no earlier than 2018-02-08 | Hugo Filipe Soares Veloso De Barros Curado [35%] | 2.8h |
| 32 | 1.1.7.2 | Testing |  | 1d? | 2018-02-14 | 2018-02-15 | 31 | 3.5d |  | finish no earlier than 2018-02-14 | André Gonçalo Bernardo Nunes [37.5%] | 3h |
| 33 | 1.1.8 | Testing Completed | milestone | 0d | 2018-02-15 | 2018-02-15 | 30 | 3.5d | 0.08d | start no earlier than 2018-02-14 |  |  |
| 34 | 1.1.9 | Deployment |  | 1d | 2018-02-15 | 2018-02-16 | 33 | 3.42d | 0d | finish no earlier than 2018-02-16 | Hugo Filipe Soares Veloso De Barros Curado [35%] | 2.8h |
| 35 | 1.1.10 | Deployment Completed | milestone | 0d | 2018-02-16 | 2018-02-16 | 34 | 3.42d |  | start no earlier than 2018-02-16 |  |  |
| 36 | 1.2 | Project Bootstrap Completed | milestone | 0d | 2018-02-16 | 2018-02-16 | 2 | 3.42d | 0d | start no earlier than 2018-02-16 |  |  |
| 37 | 1.3 | **First Iteration** |  | 26d | 2018-02-16 | 2018-03-26 | 36 | 3.42d | 0d |  |  | 116.3h |
| 38 | 1.3.1 | **Consulta Histórico de Acessos** |  | 9d | 2018-02-16 | 2018-03-01 |  | 3.42d | 0d |  |  | 40.8h |
| 39 | 1.3.1.1 | **Analysys** |  | 1.5d | 2018-02-16 | 2018-02-20 |  | 3.42d | 0d |  |  | 3.6h |
| 40 | 1.3.1.1.1 | Execution |  | 1d | 2018-02-16 | 2018-02-19 |  | 3.42d | 0d | start no earlier than 2018-02-08 | Ana Catarina Pacheco De Sousa [30%] | 2.4h |
| 41 | 1.3.1.1.2 | Testing |  | 0.5d | 2018-02-19 | 2018-02-20 | 40 | 3.42d |  | finish no earlier than 2018-02-09 | Pedro Duarte Neto [30%] | 1.2h |
| 42 | 1.3.1.2 | Analysys Completed | milestone | 0d | 2018-02-20 | 2018-02-20 | 39 | 3.42d | 0d | start no earlier than 2018-02-09 |  |  |
| 43 | 1.3.1.3 | **Design** |  | 1.5d | 2018-02-20 | 2018-02-21 | 42 | 3.42d | 0d |  |  | 3.6h |
| 44 | 1.3.1.3.1 | Execution |  | 1d | 2018-02-20 | 2018-02-21 |  | 3.42d | 0d | start no earlier than 2018-02-12 | Ana Catarina Pacheco De Sousa [30%] | 2.4h |
| 45 | 1.3.1.3.2 | Testing |  | 0.5d | 2018-02-21 | 2018-02-21 | 44 | 3.42d |  | finish no earlier than 2018-02-14 | Ana Catarina Pacheco De Sousa [30%] | 1.2h |
| 46 | 1.3.1.4 | Design Completed | milestone | 0d | 2018-02-21 | 2018-02-21 | 43 | 3.42d | 0d | start no earlier than 2018-02-12 |  |  |
| 47 | 1.3.1.5 | **Implementation** |  | 3.5d | 2018-02-21 | 2018-02-27 | 46 | 3.42d | 0d |  |  | 25.2h |
| 48 | 1.3.1.5.1 | **FrontEnd** |  | 3.5d | 2018-02-21 | 2018-02-27 |  | 3.42d | 0d |  |  | 9.9h |
| 49 | 1.3.1.5.1.1 | Add route to routes db |  | 0.5d | 2018-02-21 | 2018-02-22 |  | 3.42d | 0d | start no earlier than 2018-02-12 | Pedro Duarte Neto [30%] | 1.2h |
| 50 | 1.3.1.5.1.2 | Develop controller |  | 1.5d | 2018-02-22 | 2018-02-23 | 49 | 3.42d | 0d | finish no earlier than 2018-02-13 | André Gonçalo Bernardo Nunes [37.5%] | 4.5h |
| 51 | 1.3.1.5.1.3 | Develop view |  | 1.5d | 2018-02-23 | 2018-02-27 | 50 | 3.42d |  | finish no earlier than 2018-02-26 | Hugo Filipe Soares Veloso De Barros Curado [35%] | 4.2h |
| 52 | 1.3.1.5.2 | FrontEnd Completed | milestone | 0d | 2018-02-27 | 2018-02-27 | 48 | 3.42d |  | finish no earlier than 2018-02-19 |  |  |
| 53 | 1.3.1.5.3 | **BackEnd** |  | 3.5d | 2018-02-21 | 2018-02-27 |  | 3.42d | 0d |  |  | 10.5h |
| 54 | 1.3.1.5.3.1 | Add route to routes file |  | 0.5d | 2018-02-21 | 2018-02-22 |  | 3.92d | 0d | start no earlier than 2018-02-12 | Patrícia Alexandra Dias De Jesus [45%] | 1.8h |
| 55 | 1.3.1.5.3.2 | Develop Controller |  | 1.5d | 2018-02-22 | 2018-02-23 | 54 | 4.92d |  | start no earlier than 2018-02-16 | Hugo Filipe Soares Veloso De Barros Curado [35%] | 4.2h |
| 56 | 1.3.1.5.3.3 | Develop Model |  | 1.5d | 2018-02-23 | 2018-02-27 | 54 | 3.42d |  | start no earlier than 2018-02-16 | André Gonçalo Bernardo Nunes [37.5%] | 4.5h |
| 57 | 1.3.1.5.4 | BackEnd Completed | milestone | 0d | 2018-02-27 | 2018-02-27 | 53 | 3.42d |  | finish no earlier than 2018-02-16 |  |  |

| ID | WBS | Task | Type | Duration | Start | Finish | Predecessors | Total slack | Free slack | Constraint | Resources | Work |
| --- | --- | --- | --- | --- | --- | --- | --- | --- | --- | --- | --- | --- |
| 58 | 1.3.1.5.5 | **Networking & Security** |  | 1d | 2018-02-21 | 2018-02-22 |  | 5.92d | 0d |  |  | 4.8h |
| 59 | 1.3.1.5.5.1 | Authenticate user token |  | 1d | 2018-02-21 | 2018-02-22 |  | 5.92d |  | start no earlier than 2018-02-14 | Pedro Duarte Neto [30%] | 2.4h |
| 60 | 1.3.1.5.5.2 | General security procidures |  | 1d | 2018-02-21 | 2018-02-22 |  | 5.92d |  | start no earlier than 2018-02-14 | Ana Catarina Pacheco De Sousa [30%] | 2.4h |
| 61 | 1.3.1.5.6 | Networking & Security Completed | milestone | 0d | 2018-02-22 | 2018-02-22 | 58 | 5.92d |  | finish no earlier than 2018-02-19 |  |  |
| 62 | 1.3.1.6 | Implementation Completed | milestone | 0d | 2018-02-27 | 2018-02-27 | 47 | 3.42d | 0d | finish no earlier than 2018-02-19 |  |  |
| 63 | 1.3.1.7 | **Testing** |  | 1.5d | 2018-02-27 | 2018-02-28 | 62 | 3.42d | 0d |  |  | 4.8h |
| 64 | 1.3.1.7.1 | Building |  | 1d | 2018-02-27 | 2018-02-28 |  | 3.42d | 0d | start no earlier than 2018-02-15 | Patrícia Alexandra Dias De Jesus [45%] | 3.6h |
| 65 | 1.3.1.7.2 | Testing |  | 0.5d | 2018-02-28 | 2018-02-28 | 64 | 3.42d |  | finish no earlier than 2018-02-21 | Ana Catarina Pacheco De Sousa [30%] | 1.2h |
| 66 | 1.3.1.8 | Testing Completed | milestone | 0d | 2018-02-28 | 2018-02-28 | 63 | 3.42d | 0d | finish no earlier than 2018-02-20 |  |  |
| 67 | 1.3.1.9 | Deployment |  | 1d | 2018-02-28 | 2018-03-01 | 66 | 3.42d | 0d | finish no earlier than 2018-02-22 | Patrícia Alexandra Dias De Jesus [45%] | 3.6h |
| 68 | 1.3.1.10 | Deployment Completed | milestone | 0d | 2018-03-01 | 2018-03-01 | 67 | 3.42d |  | finish no earlier than 2018-02-27 |  |  |
| 69 | 1.3.2 | Consulta Histórico de Acessos Completed | milestone | 0d | 2018-03-01 | 2018-03-01 | 38 | 3.42d | 0d | finish no earlier than 2018-02-20 |  |  |
| 70 | 1.3.3 | **Consulta de quem esta num espaço** |  | 8.5d | 2018-03-01 | 2018-03-14 | 69 | 3.42d | 0d |  |  | 37.5h |
| 71 | 1.3.3.1 | **Analysys** |  | 1.5d | 2018-03-01 | 2018-03-05 |  | 3.42d | 0d |  |  | 3.6h |
| 72 | 1.3.3.1.1 | Execution |  | 1d | 2018-03-01 | 2018-03-02 |  | 3.42d | 0d | finish no earlier than 2018-02-05 | Pedro Duarte Neto [30%] | 2.4h |
| 73 | 1.3.3.1.2 | Testing |  | 0.5d | 2018-03-02 | 2018-03-05 | 72 | 3.42d |  | finish no earlier than 2018-02-09 | Ana Catarina Pacheco De Sousa [30%] | 1.2h |
| 74 | 1.3.3.2 | Analysys Completed | milestone | 0d | 2018-03-05 | 2018-03-05 | 71 | 3.42d | 0d | finish no earlier than 2018-02-09 |  |  |
| 75 | 1.3.3.3 | **Design** |  | 1.5d | 2018-03-05 | 2018-03-06 | 74 | 3.42d | 0d |  |  | 3.9h |
| 76 | 1.3.3.3.1 | Execution |  | 1d | 2018-03-05 | 2018-03-06 |  | 3.42d | 0d | start no earlier than 2018-02-09 | Ana Catarina Pacheco De Sousa [30%] | 2.4h |
| 77 | 1.3.3.3.2 | Testing |  | 0.5d | 2018-03-06 | 2018-03-06 | 76 | 3.42d |  | start no earlier than 2018-02-09 | André Gonçalo Bernardo Nunes [37.5%] | 1.5h |
| 78 | 1.3.3.4 | Design Completed | milestone | 0d | 2018-03-06 | 2018-03-06 | 75 | 3.42d | 0d | finish no earlier than 2018-02-09 |  |  |
| 79 | 1.3.3.5 | **Implementation** |  | 3d | 2018-03-06 | 2018-03-09 | 78 | 3.42d | 0d |  |  | 22.8h |
| 80 | 1.3.3.5.1 | **FrontEnd** |  | 3d | 2018-03-06 | 2018-03-09 |  | 3.42d | 0d |  |  | 9.9h |
| 81 | 1.3.3.5.1.1 | Add route to routes db |  | 0.5d | 2018-03-06 | 2018-03-07 |  | 3.42d | 0d | start no earlier than 2018-02-15 | Pedro Duarte Neto [30%] | 1.2h |
| 82 | 1.3.3.5.1.2 | Develop controller |  | 1.5d | 2018-03-08 | 2018-03-09 | 81 | 3.42d |  | finish no earlier than 2018-02-15 | André Gonçalo Bernardo Nunes [37.5%] | 4.5h |
| 83 | 1.3.3.5.1.3 | Develop view |  | 1.5d | 2018-03-06 | 2018-03-08 |  | 4.92d |  | finish no earlier than 2018-02-14 | Hugo Filipe Soares Veloso De Barros Curado [35%] | 4.2h |
| 84 | 1.3.3.5.2 | FrontEnd Completed | milestone | 0d | 2018-03-09 | 2018-03-09 | 80 | 3.42d |  | finish no earlier than 2018-02-22 |  |  |

| ID | WBS | Task | Type | Duration | Start | Finish | Predecessors | Total slack | Free slack | Constraint | Resources | Work |
| --- | --- | --- | --- | --- | --- | --- | --- | --- | --- | --- | --- | --- |
| 85 | 1.3.3.5.3 | **BackEnd** |  | 3d | 2018-03-06 | 2018-03-09 |  | 3.42d | 0d |  |  | 10.5h |
| 86 | 1.3.3.5.3.1 | Add route to routes file |  | 0.5d | 2018-03-06 | 2018-03-07 |  | 4.42d | 1d | start no earlier than 2018-02-12 | Patrícia Alexandra Dias De Jesus [45%] | 1.8h |
| 87 | 1.3.3.5.3.2 | Develop Model |  | 1.5d | 2018-03-06 | 2018-03-08 |  | 3.42d | 0d | start no earlier than 2018-02-12 | André Gonçalo Bernardo Nunes [37.5%] | 4.5h |
| 88 | 1.3.3.5.3.3 | Develop Controller |  | 1.5d | 2018-03-08 | 2018-03-09 | 86, 87 | 3.42d |  | start no earlier than 2018-02-15 | Hugo Filipe Soares Veloso De Barros Curado [35%] | 4.2h |
| 89 | 1.3.3.5.4 | BackEnd Completed | milestone | 0d | 2018-03-09 | 2018-03-09 | 85 | 3.42d |  | finish no earlier than 2018-02-22 |  |  |
| 90 | 1.3.3.5.5 | **Networking & Security** |  | 1d | 2018-03-06 | 2018-03-07 |  | 5.42d | 0d |  |  | 2.4h |
| 91 | 1.3.3.5.5.1 | General security procidures |  | 1d | 2018-03-06 | 2018-03-07 |  | 5.42d |  | start no earlier than 2018-02-21 | Ana Catarina Pacheco De Sousa [30%] | 2.4h |
| 92 | 1.3.3.5.6 | Networking & Security Completed | milestone | 0d | 2018-03-07 | 2018-03-07 | 90 | 5.42d |  | finish no earlier than 2018-02-22 |  |  |
| 93 | 1.3.3.6 | Implementation Completed | milestone | 0d | 2018-03-09 | 2018-03-09 | 79 | 3.42d | 0d | finish no earlier than 2018-02-16 |  |  |
| 94 | 1.3.3.7 | **Testing** |  | 1.5d | 2018-03-09 | 2018-03-13 | 93 | 3.42d | 0d |  |  | 4.8h |
| 95 | 1.3.3.7.1 | Building |  | 1d | 2018-03-09 | 2018-03-12 |  | 3.42d | 0d | start no earlier than 2018-02-22 | Patrícia Alexandra Dias De Jesus [45%] | 3.6h |
| 96 | 1.3.3.7.2 | Testing |  | 0.5d | 2018-03-12 | 2018-03-13 | 95 | 3.42d |  | finish no earlier than 2018-02-21 | Ana Catarina Pacheco De Sousa [30%] | 1.2h |
| 97 | 1.3.3.8 | Testing Completed | milestone | 0d | 2018-03-13 | 2018-03-13 | 94 | 3.42d | 0d | finish no earlier than 2018-02-16 |  |  |
| 98 | 1.3.3.9 | Deployment |  | 1d | 2018-03-13 | 2018-03-14 | 97 | 3.42d | 0d | finish no earlier than 2018-02-19 | Pedro Duarte Neto [30%] | 2.4h |
| 99 | 1.3.3.10 | Deployment Completed | milestone | 0d | 2018-03-14 | 2018-03-14 | 98 | 3.42d |  | finish no earlier than 2018-02-19 |  |  |
| 100 | 1.3.4 | Consulta de quem esta num espaço Completed | milestone | 0d | 2018-03-14 | 2018-03-14 | 70 | 3.42d | 0d | finish no earlier than 2018-02-05 |  |  |
| 101 | 1.3.5 | **Consulta de presenças nas aulas** |  | 8.5d | 2018-03-14 | 2018-03-26 | 100 | 3.42d | 0d |  |  | 38h |
| 102 | 1.3.5.1 | **Analysys** |  | 1.5d | 2018-03-14 | 2018-03-15 |  | 3.42d | 0d |  |  | 3.6h |
| 103 | 1.3.5.1.1 | Execution |  | 1d | 2018-03-14 | 2018-03-15 |  | 3.42d | 0d | start no earlier than 2018-02-09 | Pedro Duarte Neto [30%] | 2.4h |
| 104 | 1.3.5.1.2 | Testing |  | 0.5d | 2018-03-15 | 2018-03-15 | 103 | 3.42d |  | finish no earlier than 2018-02-13 | Ana Catarina Pacheco De Sousa [30%] | 1.2h |
| 105 | 1.3.5.2 | Analysys Completed | milestone | 0d | 2018-03-15 | 2018-03-15 | 102 | 3.42d | 0d | finish no earlier than 2018-02-12 |  |  |
| 106 | 1.3.5.3 | **Design** |  | 1.5d | 2018-03-15 | 2018-03-19 | 105 | 3.42d | 0d |  |  | 3.8h |
| 107 | 1.3.5.3.1 | Execution |  | 1d | 2018-03-15 | 2018-03-16 |  | 3.42d | 0d | finish no earlier than 2018-02-12 | Ana Catarina Pacheco De Sousa [30%] | 2.4h |
| 108 | 1.3.5.3.2 | Testing |  | 0.5d | 2018-03-16 | 2018-03-19 | 107 | 3.42d |  | finish no earlier than 2018-02-16 | Hugo Filipe Soares Veloso De Barros Curado [35%] | 1.4h |
| 109 | 1.3.5.4 | Design Completed | milestone | 0d | 2018-03-19 | 2018-03-19 | 106 | 3.42d | 0d | finish no earlier than 2018-02-12 |  |  |

| ID | WBS | Task | Type | Duration | Start | Finish | Predecessors | Total slack | Free slack | Constraint | Resources | Work |
| --- | --- | --- | --- | --- | --- | --- | --- | --- | --- | --- | --- | --- |
| 110 | 1.3.5.5 | **Implementation** |  | 3d | 2018-03-19 | 2018-03-22 | 109 | 3.42d | 0d |  |  | 22.8h |
| 111 | 1.3.5.5.1 | **FrontEnd** |  | 3d | 2018-03-19 | 2018-03-22 |  | 3.42d | 0d |  |  | 9.9h |
| 112 | 1.3.5.5.1.1 | Add route to routes db |  | 0.5d | 2018-03-19 | 2018-03-19 |  | 4.42d | 0d | start no earlier than 2018-02-12 | Pedro Duarte Neto [30%] | 1.2h |
| 113 | 1.3.5.5.1.2 | Develop controller |  | 1.5d | 2018-03-20 | 2018-03-22 | 112 | 3.42d |  | finish no earlier than 2018-02-16 | André Gonçalo Bernardo Nunes [37.5%] | 4.5h |
| 114 | 1.3.5.5.1.3 | Develop view |  | 1.5d | 2018-03-19 | 2018-03-20 |  | 4.92d |  | start no earlier than 2018-02-13 | Hugo Filipe Soares Veloso De Barros Curado [35%] | 4.2h |
| 115 | 1.3.5.5.2 | FrontEnd Completed | milestone | 0d | 2018-03-22 | 2018-03-22 | 111 | 3.42d |  | finish no earlier than 2018-02-16 |  |  |
| 116 | 1.3.5.5.3 | **BackEnd** |  | 3d | 2018-03-19 | 2018-03-22 |  | 3.42d | 0d |  |  | 10.5h |
| 117 | 1.3.5.5.3.1 | Add route to routes file |  | 0.5d | 2018-03-19 | 2018-03-19 |  | 4.42d | 1d | start no earlier than 2018-02-13 | Patrícia Alexandra Dias De Jesus [45%] | 1.8h |
| 118 | 1.3.5.5.3.2 | Develop Controller |  | 1.5d | 2018-03-20 | 2018-03-22 | 117, 119 | 3.42d |  | finish no earlier than 2018-02-26 | Hugo Filipe Soares Veloso De Barros Curado [35%] | 4.2h |
| 119 | 1.3.5.5.3.3 | Develop Model |  | 1.5d | 2018-03-19 | 2018-03-20 |  | 3.42d | 0d | start no earlier than 2018-02-13 | André Gonçalo Bernardo Nunes [37.5%] | 4.5h |
| 120 | 1.3.5.5.4 | BackEnd Completed | milestone | 0d | 2018-03-22 | 2018-03-22 | 116 | 3.42d |  | finish no earlier than 2018-02-26 |  |  |
| 121 | 1.3.5.5.5 | **Networking & Security** |  | 1d | 2018-03-19 | 2018-03-20 |  | 5.42d | 0d |  |  | 2.4h |
| 122 | 1.3.5.5.5.1 | General security procidures |  | 1d | 2018-03-19 | 2018-03-20 |  | 5.42d |  | start no earlier than 2018-02-15 | Ana Catarina Pacheco De Sousa [30%] | 2.4h |
| 123 | 1.3.5.5.6 | Networking & Security Completed | milestone | 0d | 2018-03-20 | 2018-03-20 | 121 | 5.42d |  | finish no earlier than 2018-02-15 |  |  |
| 124 | 1.3.5.6 | Implementation Completed | milestone | 0d | 2018-03-22 | 2018-03-22 | 110 | 3.42d | 0d | finish no earlier than 2018-02-15 |  |  |
| 125 | 1.3.5.7 | **Testing** |  | 1.5d | 2018-03-22 | 2018-03-23 | 124 | 3.42d | 0d |  |  | 4.8h |
| 126 | 1.3.5.7.1 | Building |  | 1d | 2018-03-22 | 2018-03-23 |  | 3.42d | 0d | finish no earlier than 2018-02-15 | Patrícia Alexandra Dias De Jesus [45%] | 3.6h |
| 127 | 1.3.5.7.2 | Testing |  | 0.5d | 2018-03-23 | 2018-03-23 | 126 | 3.42d |  | finish no earlier than 2018-02-21 | Ana Catarina Pacheco De Sousa [30%] | 1.2h |
| 128 | 1.3.5.8 | Testing Completed | milestone | 0d | 2018-03-23 | 2018-03-23 | 125 | 3.42d | 0d | finish no earlier than 2018-02-15 |  |  |
| 129 | 1.3.5.9 | Deployment |  | 1d | 2018-03-23 | 2018-03-26 | 128 | 3.42d | 0d | finish no earlier than 2018-02-16 | André Gonçalo Bernardo Nunes [37.5%] | 3h |
| 130 | 1.3.5.10 | Deployment Completed | milestone | 0d | 2018-03-26 | 2018-03-26 | 129 | 3.42d |  | finish no earlier than 2018-02-16 |  |  |
| 131 | 1.3.6 | Consulta de presenças nas aulasCompleted | milestone | 0d | 2018-03-26 | 2018-03-26 | 101 | 3.42d |  | finish no earlier than 2018-02-15 |  |  |
| 132 | 1.4 | First Iteration Completed | milestone | 0d | 2018-03-26 | 2018-03-26 | 37 | 3.42d | 0d | finish no earlier than 2018-02-19 |  |  |
| 133 | 1.5 | **Second Iteration** |  | 27.5d | 2018-03-26 | 2018-05-03 | 132 | 3.42d | 0d |  |  | 115.5h |
| 134 | 1.5.1 | **Consulta de salas disponíveis** |  | 8.5d | 2018-03-26 | 2018-04-06 |  | 3.42d | 0d |  |  | 38.9h |
| 135 | 1.5.1.1 | **Analysys** |  | 1.5d | 2018-03-26 | 2018-03-28 |  | 3.42d | 0d |  |  | 4.2h |
| 136 | 1.5.1.1.1 | Execution |  | 1d | 2018-03-26 | 2018-03-27 |  | 3.42d | 0d | start no earlier than 2018-02-19 | Ana Catarina Pacheco De Sousa [30%] | 2.4h |
| 137 | 1.5.1.1.2 | Testing |  | 0.5d | 2018-03-27 | 2018-03-28 | 136 | 3.42d |  | start no earlier than 2018-02-19 | Patrícia Alexandra Dias De Jesus [45%] | 1.8h |
| 138 | 1.5.1.2 | Analysys Completed | milestone | 0d | 2018-03-28 | 2018-03-28 | 135 | 3.42d | 0d | finish no earlier than 2018-02-19 |  |  |

| ID | WBS | Task | Type | Duration | Start | Finish | Predecessors | Total slack | Free slack | Constraint | Resources | Work |
| --- | --- | --- | --- | --- | --- | --- | --- | --- | --- | --- | --- | --- |
| 139 | 1.5.1.3 | **Design** |  | 1.5d | 2018-03-28 | 2018-03-29 | 138 | 3.42d | 0d |  |  | 4.4h |
| 140 | 1.5.1.3.1 | Execution |  | 1d | 2018-03-28 | 2018-03-29 |  | 3.42d | 0d | start no earlier than 2018-02-19 | André Gonçalo Bernardo Nunes [37.5%] | 3h |
| 141 | 1.5.1.3.2 | Testing |  | 0.5d | 2018-03-29 | 2018-03-29 | 140 | 3.42d |  | start no earlier than 2018-02-20 | Hugo Filipe Soares Veloso De Barros Curado [35%] | 1.4h |
| 142 | 1.5.1.4 | Design Completed | milestone | 0d | 2018-03-29 | 2018-03-29 | 139 | 3.42d | 0d | finish no earlier than 2018-02-20 |  |  |
| 143 | 1.5.1.5 | **Implementation** |  | 3d | 2018-03-29 | 2018-04-03 | 142 | 3.42d | 0d |  |  | 22.5h |
| 144 | 1.5.1.5.1 | **FrontEnd** |  | 3d | 2018-03-29 | 2018-04-03 |  | 3.42d | 0d |  |  | 10.5h |
| 145 | 1.5.1.5.1.1 | Add route to routes db |  | 0.5d | 2018-03-29 | 2018-03-30 |  | 3.92d | 0d | start no earlier than 2018-02-20 | Patrícia Alexandra Dias De Jesus [45%] | 1.8h |
| 146 | 1.5.1.5.1.2 | Develop controller |  | 1.5d | 2018-03-30 | 2018-04-03 | 145 | 3.92d |  | start no earlier than 2018-02-20 | André Gonçalo Bernardo Nunes [37.5%] | 4.5h |
| 147 | 1.5.1.5.1.3 | Develop view |  | 1.5d | 2018-04-02 | 2018-04-03 |  | 3.42d |  | start no earlier than 2018-02-20 | Hugo Filipe Soares Veloso De Barros Curado [35%] | 4.2h |
| 148 | 1.5.1.5.2 | FrontEnd Completed | milestone | 0d | 2018-04-03 | 2018-04-03 | 144 | 3.42d |  | finish no earlier than 2018-02-20 |  |  |
| 149 | 1.5.1.5.3 | **BackEnd** |  | 3d | 2018-03-29 | 2018-04-03 |  | 3.42d | 0d |  |  | 9h |
| 150 | 1.5.1.5.3.1 | Add route to routes file |  | 0.5d | 2018-03-29 | 2018-03-30 |  | 4.42d | 1d | start no earlier than 2018-02-20 | Ana Catarina Pacheco De Sousa [30%] | 1.2h |
| 151 | 1.5.1.5.3.2 | Develop Model |  | 1.5d | 2018-03-29 | 2018-04-02 |  | 3.42d | 0d | start no earlier than 2018-02-20 | Hugo Filipe Soares Veloso De Barros Curado [35%] | 4.2h |
| 152 | 1.5.1.5.3.3 | Develop Controller |  | 1.5d | 2018-04-02 | 2018-04-03 | 150, 151 | 3.42d |  | start no earlier than 2018-02-20 | Pedro Duarte Neto [30%] | 3.6h |
| 153 | 1.5.1.5.4 | BackEnd Completed | milestone | 0d | 2018-04-03 | 2018-04-03 | 149 | 3.42d |  | start no earlier than 2018-02-20 |  |  |
| 154 | 1.5.1.5.5 | **Networking & Security** |  | 1d | 2018-03-29 | 2018-03-30 |  | 5.42d | 0d |  |  | 3h |
| 155 | 1.5.1.5.5.1 | General security procidures |  | 1d | 2018-03-29 | 2018-03-30 |  | 5.42d |  | start no earlier than 2018-02-20 | André Gonçalo Bernardo Nunes [37.5%] | 3h |
| 156 | 1.5.1.5.6 | Networking & Security Completed | milestone | 0d | 2018-03-30 | 2018-03-30 | 154 | 5.42d |  | finish no earlier than 2018-02-21 |  |  |
| 157 | 1.5.1.6 | Implementation Completed | milestone | 0d | 2018-04-03 | 2018-04-03 | 143 | 3.42d | 0d | finish no earlier than 2018-02-21 |  |  |
| 158 | 1.5.1.7 | **Testing** |  | 1.5d | 2018-04-03 | 2018-04-05 | 157 | 3.42d | 0d |  |  | 4.2h |
| 159 | 1.5.1.7.1 | Building |  | 1d | 2018-04-03 | 2018-04-04 |  | 3.42d | 0d | start no earlier than 2018-02-21 | Ana Catarina Pacheco De Sousa [30%] | 2.4h |
| 160 | 1.5.1.7.2 | Testing |  | 0.5d | 2018-04-04 | 2018-04-05 | 159 | 3.42d |  | start no earlier than 2018-02-21 | Patrícia Alexandra Dias De Jesus [45%] | 1.8h |
| 161 | 1.5.1.8 | Testing Completed | milestone | 0d | 2018-04-05 | 2018-04-05 | 158 | 3.42d | 0d | finish no earlier than 2018-02-21 |  |  |
| 162 | 1.5.1.9 | Deployment |  | 1d | 2018-04-05 | 2018-04-06 | 161 | 3.42d | 0d | finish no earlier than 2018-02-22 | Patrícia Alexandra Dias De Jesus [45%] | 3.6h |
| 163 | 1.5.1.10 | Deployment Completed | milestone | 0d | 2018-04-06 | 2018-04-06 | 162 | 3.42d |  | finish no earlier than 2018-02-22 |  |  |
| 164 | 1.5.2 | Consulta de salas disponíveis Completed | milestone | 0d | 2018-04-06 | 2018-04-06 | 134 | 3.42d | 0d | finish no earlier than 2018-02-22 |  |  |

| ID | WBS | Task | Type | Duration | Start | Finish | Predecessors | Total slack | Free slack | Constraint | Resources | Work |
| --- | --- | --- | --- | --- | --- | --- | --- | --- | --- | --- | --- | --- |
| 165 | 1.5.3 | **Marcação de salas** |  | 8.5d | 2018-04-06 | 2018-04-18 | 164 | 3.42d | 0d |  |  | 37.1h |
| 166 | 1.5.3.1 | **Analysys** |  | 1.5d | 2018-04-06 | 2018-04-09 |  | 3.42d | 0d |  |  | 3.6h |
| 167 | 1.5.3.1.1 | Execution |  | 1d | 2018-04-06 | 2018-04-09 |  | 3.42d | 0d | start no earlier than 2018-02-22 | Ana Catarina Pacheco De Sousa [30%] | 2.4h |
| 168 | 1.5.3.1.2 | Testing |  | 0.5d | 2018-04-09 | 2018-04-09 | 167 | 3.42d |  | start no earlier than 2018-02-22 | Pedro Duarte Neto [30%] | 1.2h |
| 169 | 1.5.3.2 | Analysys Completed | milestone | 0d | 2018-04-09 | 2018-04-09 | 166 | 3.42d | 0d | finish no earlier than 2018-02-22 |  |  |
| 170 | 1.5.3.3 | **Design** |  | 1.5d | 2018-04-09 | 2018-04-11 | 169 | 3.42d | 0d |  |  | 5h |
| 171 | 1.5.3.3.1 | Execution |  | 1d | 2018-04-09 | 2018-04-10 |  | 3.42d | 0d | start no earlier than 2018-02-22 | Patrícia Alexandra Dias De Jesus [45%] | 3.6h |
| 172 | 1.5.3.3.2 | Testing |  | 0.5d | 2018-04-10 | 2018-04-11 | 171 | 3.42d |  | start no earlier than 2018-02-22 | Hugo Filipe Soares Veloso De Barros Curado [35%] | 1.4h |
| 173 | 1.5.3.4 | Design Completed | milestone | 0d | 2018-04-11 | 2018-04-11 | 170 | 3.42d | 0d | finish no earlier than 2018-02-23 |  |  |
| 174 | 1.5.3.5 | **Implementation** |  | 3d | 2018-04-11 | 2018-04-16 | 173 | 3.42d | 0d |  |  | 21.5h |
| 175 | 1.5.3.5.1 | **FrontEnd** |  | 3d | 2018-04-11 | 2018-04-16 |  | 3.42d | 0d |  |  | 9.5h |
| 176 | 1.5.3.5.1.1 | Add route to routes db |  | 0.5d | 2018-04-11 | 2018-04-11 |  | 3.92d | 0d | start no earlier than 2018-02-23 | Hugo Filipe Soares Veloso De Barros Curado [35%] | 1.4h |
| 177 | 1.5.3.5.1.2 | Develop controller |  | 1.5d | 2018-04-12 | 2018-04-13 | 176 | 3.92d |  | start no earlier than 2018-02-23 | André Gonçalo Bernardo Nunes [37.5%] | 4.5h |
| 178 | 1.5.3.5.1.3 | Develop view |  | 1.5d | 2018-04-12 | 2018-04-16 |  | 3.42d |  | start no earlier than 2018-02-26 | Pedro Duarte Neto [30%] | 3.6h |
| 179 | 1.5.3.5.2 | FrontEnd Completed | milestone | 0d | 2018-04-16 | 2018-04-16 | 175 | 3.42d |  | finish no earlier than 2018-02-26 |  |  |
| 180 | 1.5.3.5.3 | **BackEnd** |  | 3d | 2018-04-11 | 2018-04-16 |  | 3.42d | 0d |  |  | 9h |
| 181 | 1.5.3.5.3.1 | Add route to routes file |  | 0.5d | 2018-04-11 | 2018-04-11 |  | 4.42d | 1d | start no earlier than 2018-02-23 | Ana Catarina Pacheco De Sousa [30%] | 1.2h |
| 182 | 1.5.3.5.3.2 | Develop Model |  | 1.5d | 2018-04-11 | 2018-04-12 |  | 3.42d | 0d | start no earlier than 2018-02-23 | Pedro Duarte Neto [30%] | 3.6h |
| 183 | 1.5.3.5.3.3 | Develop Controller |  | 1.5d | 2018-04-12 | 2018-04-16 | 181, 182 | 3.42d |  | finish no earlier than 2018-02-23 | Hugo Filipe Soares Veloso De Barros Curado [35%] | 4.2h |
| 184 | 1.5.3.5.4 | BackEnd Completed | milestone | 0d | 2018-04-16 | 2018-04-16 | 180 | 3.42d |  | finish no earlier than 2018-02-23 |  |  |
| 185 | 1.5.3.5.5 | **Networking& Security** |  | 1d | 2018-04-11 | 2018-04-12 |  | 5.42d | 0d |  |  | 3h |
| 186 | 1.5.3.5.5.1 | General security procidures |  | 1d | 2018-04-11 | 2018-04-12 |  | 5.42d |  | start no earlier than 2018-02-26 | André Gonçalo Bernardo Nunes [37.5%] | 3h |
| 187 | 1.5.3.5.6 | Networking & Security Completed | milestone | 0d | 2018-04-12 | 2018-04-12 | 185 | 5.42d |  | finish no earlier than 2018-02-26 |  |  |
| 188 | 1.5.3.6 | Implementation Completed | milestone | 0d | 2018-04-16 | 2018-04-16 | 174 | 3.42d | 0d | finish no earlier than 2018-02-26 |  |  |

| ID | WBS | Task | Type | Duration | Start | Finish | Predecessors | Total slack | Free slack | Constraint | Resources | Work |
| --- | --- | --- | --- | --- | --- | --- | --- | --- | --- | --- | --- | --- |
| 189 | 1.5.3.7 | **Testing** |  | 1.5d | 2018-04-16 | 2018-04-17 | 188 | 3.42d | 0d |  |  | 4h |
| 190 | 1.5.3.7.1 | Building |  | 1d | 2018-04-16 | 2018-04-17 |  | 3.42d | 0d | start no earlier than 2018-02-26 | Hugo Filipe Soares Veloso De Barros Curado [35%] | 2.8h |
| 191 | 1.5.3.7.2 | Testing |  | 0.5d | 2018-04-17 | 2018-04-17 | 190 | 3.42d |  | start no earlier than 2018-02-27 | Pedro Duarte Neto [30%] | 1.2h |
| 192 | 1.5.3.8 | Testing Completed | milestone | 0d | 2018-04-17 | 2018-04-17 | 189 | 3.42d | 0d | finish no earlier than 2018-02-27 |  |  |
| 193 | 1.5.3.9 | Deployment |  | 1d | 2018-04-17 | 2018-04-18 | 192 | 3.42d | 0d | finish no earlier than 2018-02-27 | André Gonçalo Bernardo Nunes [37.5%] | 3h |
| 194 | 1.5.3.10 | Deployment Completed | milestone | 0d | 2018-04-18 | 2018-04-18 | 193 | 3.42d |  | finish no earlier than 2018-02-27 |  |  |
| 195 | 1.5.4 | Marcação de salas Completed | milestone | 0d | 2018-04-18 | 2018-04-18 | 165 | 3.42d | 0d | finish no earlier than 2018-02-27 |  |  |
| 196 | 1.5.5 | **Horario de espaços livres** |  | 10.5d | 2018-04-18 | 2018-05-03 | 195 | 3.42d | 0d |  |  | 39.5h |
| 197 | 1.5.5.1 | **Analysys** |  | 1.5d | 2018-04-18 | 2018-04-20 |  | 3.42d | 0d |  |  | 4.8h |
| 198 | 1.5.5.1.1 | Execution |  | 1d | 2018-04-18 | 2018-04-19 |  | 3.42d | 0d |  | Patrícia Alexandra Dias De Jesus [45%] | 3.6h |
| 199 | 1.5.5.1.2 | Testing |  | 0.5d | 2018-04-19 | 2018-04-20 | 198 | 3.42d |  |  | Ana Catarina Pacheco De Sousa [30%] | 1.2h |
| 200 | 1.5.5.2 | Analysys Completed | milestone | 0d | 2018-04-20 | 2018-04-20 | 197 | 3.42d | 0d |  |  |  |
| 201 | 1.5.5.3 | **Design** |  | 1.5d | 2018-04-20 | 2018-04-23 | 200 | 3.42d | 0d |  |  | 4.2h |
| 202 | 1.5.5.3.1 | Execution |  | 1d | 2018-04-20 | 2018-04-23 |  | 3.42d | 0d |  | André Gonçalo Bernardo Nunes [37.5%] | 3h |
| 203 | 1.5.5.3.2 | Testing |  | 0.5d | 2018-04-23 | 2018-04-23 | 202 | 3.42d |  |  | Ana Catarina Pacheco De Sousa [30%] | 1.2h |
| 204 | 1.5.5.4 | Design Completed | milestone | 0d | 2018-04-23 | 2018-04-23 | 201 | 3.42d | 0d |  |  |  |
| 205 | 1.5.5.5 | **Implementation** |  | 5d | 2018-04-23 | 2018-04-30 | 204 | 3.42d | 0d |  |  | 23.1h |
| 206 | 1.5.5.5.1 | **FrontEnd** |  | 2d | 2018-04-23 | 2018-04-25 |  | 3.42d | 0d |  |  | 9.9h |
| 207 | 1.5.5.5.1.1 | Add route to routes db |  | 0.5d | 2018-04-23 | 2018-04-24 |  | 3.42d | 0d |  | Pedro Duarte Neto [30%] | 1.2h |
| 208 | 1.5.5.5.1.2 | Develop controller |  | 1.5d | 2018-04-24 | 2018-04-25 | 207 | 3.42d |  |  | Hugo Filipe Soares Veloso De Barros Curado [35%] | 4.2h |
| 209 | 1.5.5.5.1.3 | Develop view |  | 1.5d | 2018-04-23 | 2018-04-25 |  | 3.92d |  |  | André Gonçalo Bernardo Nunes [37.5%] | 4.5h |
| 210 | 1.5.5.5.2 | FrontEnd Completed | milestone | 0d | 2018-04-25 | 2018-04-25 | 206 | 3.42d | 0d | start no earlier than 2018-02-07 |  |  |
| 211 | 1.5.5.5.3 | **BackEnd** |  | 3d | 2018-04-25 | 2018-04-30 | 210 | 3.42d | 0d |  |  | 9.6h |
| 212 | 1.5.5.5.3.1 | Add route to routes file |  | 0.5d | 2018-04-25 | 2018-04-26 |  | 4.42d | 1d |  | Patrícia Alexandra Dias De Jesus [45%] | 1.8h |
| 213 | 1.5.5.5.3.2 | Develop Model |  | 1.5d | 2018-04-25 | 2018-04-27 |  | 3.42d | 0d | start no earlier than 2018-02-12 | Ana Catarina Pacheco De Sousa [30%] | 3.6h |
| 214 | 1.5.5.5.3.3 | Develop Controller |  | 1.5d | 2018-04-27 | 2018-04-30 | 212, 213 | 3.42d |  |  | Hugo Filipe Soares Veloso De Barros Curado [35%] | 4.2h |
| 215 | 1.5.5.5.4 | BackEnd Completed | milestone | 0d | 2018-04-30 | 2018-04-30 | 211 | 3.42d |  | start no earlier than 2018-02-08 |  |  |

| ID | WBS | Task | Type | Duration | Start | Finish | Predecessors | Total slack | Free slack | Constraint | Resources | Work |
| --- | --- | --- | --- | --- | --- | --- | --- | --- | --- | --- | --- | --- |
| 216 | 1.5.5.5.5 | **Networking & Security** |  | 1d | 2018-04-23 | 2018-04-24 |  | 7.42d | 0d |  |  | 3.6h |
| 217 | 1.5.5.5.5.1 | General security procidures |  | 1d | 2018-04-23 | 2018-04-24 |  | 7.42d |  | start no earlier than 2018-02-12 | Patrícia Alexandra Dias De Jesus [45%] | 3.6h |
| 218 | 1.5.5.5.6 | Networking & Security Completed | milestone | 0d | 2018-04-24 | 2018-04-24 | 216 | 7.42d |  | start no earlier than 2018-02-07 |  |  |
| 219 | 1.5.5.6 | Implementation Completed | milestone | 0d | 2018-04-30 | 2018-04-30 | 205 | 3.42d | 0d | start no earlier than 2018-02-12 |  |  |
| 220 | 1.5.5.7 | **Testing** |  | 1.5d | 2018-04-30 | 2018-05-02 | 219 | 3.42d | 0d |  |  | 5h |
| 221 | 1.5.5.7.1 | Building |  | 1d | 2018-04-30 | 2018-05-01 |  | 3.42d | 0d | start no earlier than 2018-02-12 | Patrícia Alexandra Dias De Jesus [45%] | 3.6h |
| 222 | 1.5.5.7.2 | Testing |  | 0.5d | 2018-05-01 | 2018-05-02 | 221 | 3.42d |  | start no earlier than 2018-02-12 | Hugo Filipe Soares Veloso De Barros Curado [35%] | 1.4h |
| 223 | 1.5.5.8 | Testing Completed | milestone | 0d | 2018-05-02 | 2018-05-02 | 220 | 3.42d | 0d | start no earlier than 2018-02-12 |  |  |
| 224 | 1.5.5.9 | Deployment |  | 1d | 2018-05-02 | 2018-05-03 | 223 | 3.42d | 0d | start no earlier than 2018-02-13 | Pedro Duarte Neto [30%] | 2.4h |
| 225 | 1.5.5.10 | Deployment Completed | milestone | 0d | 2018-05-03 | 2018-05-03 | 224 | 3.42d |  |  |  |  |
| 226 | 1.5.6 | Horario de espaços livres Completed | milestone | 0d | 2018-05-03 | 2018-05-03 | 196 | 3.42d |  | start no earlier than 2018-02-13 |  |  |
| 227 | 1.6 | Second Iteraton Completed | milestone | 0d | 2018-05-03 | 2018-05-03 | 133 | 3.42d | 0d | finish no earlier than 2018-02-27 |  |  |
| 228 | 1.7 | **Third Iteration** |  | 28.5d | 2018-05-03 | 2018-06-12 | 227 | 3d | 0d |  |  | 115.2h |
| 229 | 1.7.1 | **Horario do curso frequentado** |  | 8.5d | 2018-05-03 | 2018-05-15 |  | 3d | 0d |  |  | 39.4h |
| 230 | 1.7.1.1 | **Analysys** |  | 1.5d | 2018-05-03 | 2018-05-04 |  | 3.42d | 0d |  |  | 4.8h |
| 231 | 1.7.1.1.1 | Execution |  | 1d | 2018-05-03 | 2018-05-04 | 227 | 3.42d | 0d | start no earlier than 2018-02-05 | Patrícia Alexandra Dias De Jesus [45%] | 3.6h |
| 232 | 1.7.1.1.2 | Testing |  | 0.5d | 2018-05-04 | 2018-05-04 | 231 | 3.42d |  | start no earlier than 2018-02-06 | Ana Catarina Pacheco De Sousa [30%] | 1.2h |
| 233 | 1.7.1.2 | Analysys Completed | milestone | 0d | 2018-05-04 | 2018-05-04 | 230 | 3.42d | 0d | finish no earlier than 2018-02-06 |  |  |
| 234 | 1.7.1.3 | **Design** |  | 1.5d | 2018-05-04 | 2018-05-08 | 233 | 3.42d | 0d |  |  | 4.8h |
| 235 | 1.7.1.3.1 | Execution |  | 1d | 2018-05-04 | 2018-05-07 |  | 3.42d | 0d | start no earlier than 2018-02-05 | André Gonçalo Bernardo Nunes [37.5%] | 3h |
| 236 | 1.7.1.3.2 | Testing |  | 0.5d | 2018-05-07 | 2018-05-08 | 235 | 3.42d |  | start no earlier than 2018-02-05 | Patrícia Alexandra Dias De Jesus [45%] | 1.8h |
| 237 | 1.7.1.4 | Design Completed | milestone | 0d | 2018-05-08 | 2018-05-08 | 234 | 3.42d | 0d | finish no earlier than 2018-02-06 |  |  |
| 238 | 1.7.1.5 | **Implementation** |  | 3d | 2018-05-08 | 2018-05-11 | 237 | 3d | 0d |  |  | 21.9h |
| 239 | 1.7.1.5.1 | **FrontEnd** |  | 3d | 2018-05-08 | 2018-05-11 |  | 3d |  |  |  | 9.9h |
| 240 | 1.7.1.5.1.1 | Add route to routes db |  | 0.5d | 2018-05-08 | 2018-05-08 |  | 3.42d | 0d | start no earlier than 2018-02-06 | Pedro Duarte Neto [30%] | 1.2h |
| 241 | 1.7.1.5.1.2 | Develop controller |  | 1.5d | 2018-05-09 | 2018-05-11 | 240 | 3d |  | start no earlier than 2018-02-06 | Hugo Filipe Soares Veloso De Barros Curado [35%] | 4.2h |
| 242 | 1.7.1.5.1.3 | Develop view |  | 1.5d | 2018-05-08 | 2018-05-09 |  | 4.5d |  | start no earlier than 2018-02-06 | André Gonçalo Bernardo Nunes [37.5%] | 4.5h |
| 243 | 1.7.1.5.2 | FrontEnd Completed | milestone | 0d | 2018-05-08 | 2018-05-08 | 175 | 6d |  | finish no earlier than 2018-02-26 |  |  |

| ID | WBS | Task | Type | Duration | Start | Finish | Predecessors | Total slack | Free slack | Constraint | Resources | Work |
| --- | --- | --- | --- | --- | --- | --- | --- | --- | --- | --- | --- | --- |
| 244 | 1.7.1.5.3 | **BackEnd** |  | 1.5d | 2018-05-08 | 2018-05-09 |  | 4.5d |  |  |  | 9.6h |
| 245 | 1.7.1.5.3.1 | Add route to routes file |  | 0.5d | 2018-05-08 | 2018-05-08 |  | 5.5d |  | start no earlier than 2018-02-06 | Patrícia Alexandra Dias De Jesus [45%] | 1.8h |
| 246 | 1.7.1.5.3.2 | Develop Model |  | 1.5d | 2018-05-08 | 2018-05-09 |  | 4.5d |  | start no earlier than 2018-02-12 | Ana Catarina Pacheco De Sousa [30%] | 3.6h |
| 247 | 1.7.1.5.3.3 | Develop Controller |  | 1.5d | 2018-05-08 | 2018-05-09 |  | 4.5d |  | start no earlier than 2018-02-06 | Hugo Filipe Soares Veloso De Barros Curado [35%] | 4.2h |
| 248 | 1.7.1.5.4 | BackEnd Completed | milestone | 0d | 2018-05-08 | 2018-05-08 | 180 | 6d |  | finish no earlier than 2018-02-23 |  |  |
| 249 | 1.7.1.5.5 | **Networking & Security** |  | 1d | 2018-05-08 | 2018-05-09 |  | 4.5d |  |  |  | 2.4h |
| 250 | 1.7.1.5.5.1 | General security procidures |  | 1d | 2018-05-08 | 2018-05-09 |  | 4.5d |  | start no earlier than 2018-02-15 | Pedro Duarte Neto [30%] | 2.4h |
| 251 | 1.7.1.5.6 | Networking & Security Completed | milestone | 0d | 2018-05-08 | 2018-05-08 | 185 | 6d |  | finish no earlier than 2018-02-26 |  |  |
| 252 | 1.7.1.6 | Implementation Completed | milestone | 0d | 2018-05-11 | 2018-05-11 | 238 | 5.5d |  | finish no earlier than 2018-02-26 |  |  |
| 253 | 1.7.1.7 | **Testing** |  | 1.5d | 2018-05-11 | 2018-05-14 | 238 | 3d | 0d |  |  | 5.1h |
| 254 | 1.7.1.7.1 | Building |  | 1d | 2018-05-11 | 2018-05-14 |  | 3d | 0d | start no earlier than 2018-02-26 | Patrícia Alexandra Dias De Jesus [45%] | 3.6h |
| 255 | 1.7.1.7.2 | Testing |  | 0.5d | 2018-05-14 | 2018-05-14 | 254 | 3d |  | start no earlier than 2018-02-27 | André Gonçalo Bernardo Nunes [37.5%] | 1.5h |
| 256 | 1.7.1.8 | Testing Completed | milestone | 0d | 2018-05-14 | 2018-05-14 | 253 | 4d |  | finish no earlier than 2018-02-27 |  |  |
| 257 | 1.7.1.9 | Deployment |  | 1d | 2018-05-14 | 2018-05-15 | 253 | 3d | 0d | finish no earlier than 2018-02-27 | Hugo Filipe Soares Veloso De Barros Curado [35%] | 2.8h |
| 258 | 1.7.1.10 | Deployment Completed | milestone | 0d | 2018-05-15 | 2018-05-15 | 257 | 3d |  | finish no earlier than 2018-02-27 |  |  |
| 259 | 1.7.2 | Horario do curso frequentado Completed | milestone | 0d | 2018-05-15 | 2018-05-15 | 229 | 3d | 0d | finish no earlier than 2018-02-13 |  |  |
| 260 | 1.7.3 | **Horario de aulas e compromissos** |  | 8.5d | 2018-05-15 | 2018-05-28 | 259 | 3d |  |  |  | 38.2h |
| 261 | 1.7.3.1 | **Analysys** |  | 1.5d | 2018-05-15 | 2018-05-17 | 259 | 3d | 0d |  |  | 3.6h |
| 262 | 1.7.3.1.1 | Execution |  | 1d | 2018-05-15 | 2018-05-16 |  | 3d | 0d | finish no earlier than 2018-02-05 | Pedro Duarte Neto [30%] | 2.4h |
| 263 | 1.7.3.1.2 | Testing |  | 0.5d | 2018-05-16 | 2018-05-17 | 262 | 3d |  | finish no earlier than 2018-02-05 | Ana Catarina Pacheco De Sousa [30%] | 1.2h |
| 264 | 1.7.3.2 | Analysys Completed | milestone | 0d | 2018-05-17 | 2018-05-17 | 261 | 3d | 0d | finish no earlier than 2018-02-05 |  |  |
| 265 | 1.7.3.3 | **Design** |  | 1.5d | 2018-05-17 | 2018-05-18 | 264 | 3d | 0d |  |  | 5h |
| 266 | 1.7.3.3.1 | Execution |  | 1d | 2018-05-17 | 2018-05-18 |  | 3d | 0d | start no earlier than 2018-02-05 | Patrícia Alexandra Dias De Jesus [45%] | 3.6h |
| 267 | 1.7.3.3.2 | Testing |  | 0.5d | 2018-05-18 | 2018-05-18 | 266 | 3d |  | start no earlier than 2018-02-05 | Hugo Filipe Soares Veloso De Barros Curado [35%] | 1.4h |
| 268 | 1.7.3.4 | Design Completed | milestone | 0d | 2018-05-18 | 2018-05-18 | 265 | 3d | 0d | finish no earlier than 2018-02-05 |  |  |

| ID | WBS | Task | Type | Duration | Start | Finish | Predecessors | Total slack | Free slack | Constraint | Resources | Work |
| --- | --- | --- | --- | --- | --- | --- | --- | --- | --- | --- | --- | --- |
| 269 | 1.7.3.5 | **Implementation** |  | 3d | 2018-05-18 | 2018-05-23 | 268 | 3d | 0d |  |  | 23.4h |
| 270 | 1.7.3.5.1 | **FrontEnd** |  | 3d | 2018-05-18 | 2018-05-23 |  | 3d | 0d |  |  | 9.9h |
| 271 | 1.7.3.5.1.1 | Add route to routes db |  | 0.5d | 2018-05-18 | 2018-05-21 |  | 3d | 0d | start no earlier than 2018-02-05 | Pedro Duarte Neto [30%] | 1.2h |
| 272 | 1.7.3.5.1.2 | Develop controller |  | 1.5d | 2018-05-22 | 2018-05-23 | 271 | 3d |  | finish no earlier than 2018-02-06 | André Gonçalo Bernardo Nunes [37.5%] | 4.5h |
| 273 | 1.7.3.5.1.3 | Develop view |  | 1.5d | 2018-05-18 | 2018-05-22 |  | 4.5d |  | start no earlier than 2018-02-05 | Hugo Filipe Soares Veloso De Barros Curado [35%] | 4.2h |
| 274 | 1.7.3.5.2 | FrontEnd Completed | milestone | 0d | 2018-05-23 | 2018-05-23 | 270 | 3d |  | finish no earlier than 2018-02-07 |  |  |
| 275 | 1.7.3.5.3 | **BackEnd** |  | 3d | 2018-05-18 | 2018-05-23 |  | 3d | 0d |  |  | 9.9h |
| 276 | 1.7.3.5.3.1 | Add route to routes file |  | 0.5d | 2018-05-18 | 2018-05-21 |  | 4d | 1d | start no earlier than 2018-02-06 | Ana Catarina Pacheco De Sousa [30%] | 1.2h |
| 277 | 1.7.3.5.3.2 | Develop Model |  | 1.5d | 2018-05-18 | 2018-05-22 |  | 3d | 0d | start no earlier than 2018-02-12 | André Gonçalo Bernardo Nunes [37.5%] | 4.5h |
| 278 | 1.7.3.5.3.3 | Develop Controller |  | 1.5d | 2018-05-22 | 2018-05-23 | 276, 277 | 3d |  | finish no earlier than 2018-02-15 | Hugo Filipe Soares Veloso De Barros Curado [35%] | 4.2h |
| 279 | 1.7.3.5.4 | BackEnd Completed | milestone | 0d | 2018-05-23 | 2018-05-23 | 275 | 3d |  | finish no earlier than 2018-02-15 |  |  |
| 280 | 1.7.3.5.5 | **Networking & Security** |  | 1d | 2018-05-18 | 2018-05-21 |  | 5d | 0d |  |  | 3.6h |
| 281 | 1.7.3.5.5.1 | General security procidures |  | 1d | 2018-05-18 | 2018-05-21 |  | 5d |  | start no earlier than 2018-02-12 | Patrícia Alexandra Dias De Jesus [45%] | 3.6h |
| 282 | 1.7.3.5.6 | Networking & Security Completed | milestone | 0d | 2018-05-21 | 2018-05-21 | 280 | 5d |  | finish no earlier than 2018-02-12 |  |  |
| 283 | 1.7.3.6 | Implementation Completed | milestone | 0d | 2018-05-23 | 2018-05-23 | 269 | 3d | 0d | finish no earlier than 2018-02-15 |  |  |
| 284 | 1.7.3.7 | **Testing** |  | 1.5d | 2018-05-23 | 2018-05-25 | 283 | 3d | 0d |  |  | 3.8h |
| 285 | 1.7.3.7.1 | Building |  | 1d | 2018-05-23 | 2018-05-24 |  | 3d | 0d | start no earlier than 2018-02-12 | Ana Catarina Pacheco De Sousa [30%] | 2.4h |
| 286 | 1.7.3.7.2 | Testing |  | 0.5d | 2018-05-24 | 2018-05-25 | 285 | 3d |  | start no earlier than 2018-02-12 | Hugo Filipe Soares Veloso De Barros Curado [35%] | 1.4h |
| 287 | 1.7.3.8 | Testing Completed | milestone | 0d | 2018-05-25 | 2018-05-25 | 284 | 3d | 0d | finish no earlier than 2018-02-12 |  |  |
| 288 | 1.7.3.9 | Deployment |  | 1d | 2018-05-25 | 2018-05-28 | 287 | 3d | 0d | finish no earlier than 2018-02-14 | Ana Catarina Pacheco De Sousa [30%] | 2.4h |
| 289 | 1.7.3.10 | Deployment Completed | milestone | 0d | 2018-05-28 | 2018-05-28 | 288 | 3d | 0d | finish no earlier than 2018-02-14 |  |  |
| 290 | 1.7.4 | Horario de aulas e compromissos Completed | milestone | 0d | 2018-05-28 | 2018-05-28 | 289 | 3d | 0d | finish no earlier than 2018-02-14 |  |  |
| 291 | 1.7.5 | **Criar acessos para visitantes** |  | 11.5d | 2018-05-28 | 2018-06-12 | 290 | 3d |  |  |  | 37.6h |
| 292 | 1.7.5.1 | **Analysys** |  | 1.5d | 2018-05-28 | 2018-05-29 |  | 3d | 0d |  |  | 3.6h |
| 293 | 1.7.5.1.1 | Execution |  | 1d | 2018-05-28 | 2018-05-29 |  | 3d | 0d | start no earlier than 2018-02-05 | Pedro Duarte Neto [30%] | 2.4h |
| 294 | 1.7.5.1.2 | Testing |  | 0.5d | 2018-05-29 | 2018-05-29 | 293 | 3d |  | start no earlier than 2018-02-06 | Ana Catarina Pacheco De Sousa [30%] | 1.2h |
| 295 | 1.7.5.2 | Analysys Completed | milestone | 0d | 2018-05-29 | 2018-05-29 | 292 | 3d | 0d | finish no earlier than 2018-02-06 |  |  |

| ID | WBS | Task | Type | Duration | Start | Finish | Predecessors | Total slack | Free slack | Constraint | Resources | Work |
| --- | --- | --- | --- | --- | --- | --- | --- | --- | --- | --- | --- | --- |
| 296 | 1.7.5.3 | **Design** |  | 1.5d | 2018-05-29 | 2018-05-31 | 295 | 3d | 0d |  |  | 5h |
| 297 | 1.7.5.3.1 | Execution |  | 1d | 2018-05-29 | 2018-05-30 |  | 3d | 0d | start no earlier than 2018-02-05 | Patrícia Alexandra Dias De Jesus [45%] | 3.6h |
| 298 | 1.7.5.3.2 | Testing |  | 0.5d | 2018-05-30 | 2018-05-31 | 297 | 3d |  | finish no earlier than 2018-02-05 | Hugo Filipe Soares Veloso De Barros Curado [35%] | 1.4h |
| 299 | 1.7.5.4 | Design Completed | milestone | 0d | 2018-05-31 | 2018-05-31 | 296 | 3d | 0d | finish no earlier than 2018-02-06 |  |  |
| 300 | 1.7.5.5 | **Implementation** |  | 6d | 2018-05-31 | 2018-06-08 | 299 | 3d | 0d |  |  | 22.8h |
| 301 | 1.7.5.5.1 | **FrontEnd** |  | 2d | 2018-05-31 | 2018-06-04 |  | 3d | 0d |  |  | 9.3h |
| 302 | 1.7.5.5.1.1 | Add route to routes db |  | 0.5d | 2018-05-31 | 2018-05-31 |  | 3d | 0d | start no earlier than 2018-02-05 | André Gonçalo Bernardo Nunes [37.5%] | 1.5h |
| 303 | 1.7.5.5.1.2 | Develop controller |  | 1.5d | 2018-05-31 | 2018-06-04 | 302 | 3d |  | start no earlier than 2018-02-07 | Hugo Filipe Soares Veloso De Barros Curado [35%] | 4.2h |
| 304 | 1.7.5.5.1.3 | Develop view |  | 1.5d | 2018-05-31 | 2018-06-01 |  | 3.5d |  | finish no earlier than 2018-02-05 | Pedro Duarte Neto [30%] | 3.6h |
| 305 | 1.7.5.5.2 | FrontEnd Completed | milestone | 0d | 2018-06-04 | 2018-06-04 | 301 | 3d | 0d | finish no earlier than 2018-02-07 |  |  |
| 306 | 1.7.5.5.3 | **BackEnd** |  | 3d | 2018-06-04 | 2018-06-07 | 305 | 3d | 0d |  |  | 9.9h |
| 307 | 1.7.5.5.3.1 | Add route to routes file |  | 0.5d | 2018-06-04 | 2018-06-04 |  | 4d | 1d | start no earlier than 2018-02-08 | Ana Catarina Pacheco De Sousa [30%] | 1.2h |
| 308 | 1.7.5.5.3.2 | Develop Model |  | 1.5d | 2018-06-04 | 2018-06-05 |  | 3d | 0d | start no earlier than 2018-02-12 | Hugo Filipe Soares Veloso De Barros Curado [35%] | 4.2h |
| 309 | 1.7.5.5.3.3 | Develop Controller |  | 1.5d | 2018-06-05 | 2018-06-07 | 307, 308 | 3d |  | finish no earlier than 2018-02-14 | André Gonçalo Bernardo Nunes [37.5%] | 4.5h |
| 310 | 1.7.5.5.4 | BackEnd Completed | milestone | 0d | 2018-06-07 | 2018-06-07 | 306 | 3d | 0d | finish no earlier than 2018-02-13 |  |  |
| 311 | 1.7.5.5.5 | **Networking & Security** |  | 1d | 2018-06-07 | 2018-06-08 | 310 | 3d | 0d |  |  | 3.6h |
| 312 | 1.7.5.5.5.1 | General security procidures |  | 1d | 2018-06-07 | 2018-06-08 |  | 3d |  | start no earlier than 2018-02-12 | Patrícia Alexandra Dias De Jesus [45%] | 3.6h |
| 313 | 1.7.5.5.6 | Networking & Security Completed | milestone | 0d | 2018-06-08 | 2018-06-08 | 311 | 3d |  | finish no earlier than 2018-02-13 |  |  |
| 314 | 1.7.5.6 | Implementation Completed | milestone | 0d | 2018-06-08 | 2018-06-08 | 300 | 3d | 0d | finish no earlier than 2018-02-13 |  |  |
| 315 | 1.7.5.7 | **Testing** |  | 1.5d | 2018-06-08 | 2018-06-11 | 314 | 3d | 0d |  |  | 3.8h |
| 316 | 1.7.5.7.1 | Building |  | 1d | 2018-06-08 | 2018-06-11 |  | 3d | 0d | start no earlier than 2018-02-13 | Ana Catarina Pacheco De Sousa [30%] | 2.4h |
| 317 | 1.7.5.7.2 | Testing |  | 0.5d | 2018-06-11 | 2018-06-11 | 316 | 3d |  | finish no earlier than 2018-02-13 | Hugo Filipe Soares Veloso De Barros Curado [35%] | 1.4h |
| 318 | 1.7.5.8 | Testing Completed | milestone | 0d | 2018-06-11 | 2018-06-11 | 315 | 3d | 0d | finish no earlier than 2018-02-12 |  |  |
| 319 | 1.7.5.9 | Deployment |  | 1d | 2018-06-11 | 2018-06-12 | 318 | 3d | 0d | finish no earlier than 2018-02-13 | Ana Catarina Pacheco De Sousa [30%] | 2.4h |
| 320 | 1.7.5.10 | Deployment Completed | milestone | 0d | 2018-06-12 | 2018-06-12 | 319 | 3d | 0d | finish no earlier than 2018-02-13 |  |  |
| 321 | 1.7.6 | Criar acessos para visitantes Completed | milestone | 0d | 2018-06-12 | 2018-06-12 | 320 | 3d |  | finish no earlier than 2018-02-05 |  |  |
| 322 | 1.8 | Third Iteration Completed | milestone | 0d | 2018-06-12 | 2018-06-12 | 228 | 3d | 0d | finish no earlier than 2018-02-05 |  |  |

| ID | WBS | Task | Type | Duration | Start | Finish | Predecessors | Total slack | Free slack | Constraint | Resources | Work |
| --- | --- | --- | --- | --- | --- | --- | --- | --- | --- | --- | --- | --- |
| 323 | 1.9 | **Fourth Iteration** |  | 24.5d | 2018-06-12 | 2018-07-17 | 322 | 2d | 0d |  |  | 109.6h |
| 324 | 1.9.1 | **Consultar presenças dos alunos** |  | 7d | 2018-06-12 | 2018-06-21 |  | 2.5d | 0d |  |  | 39.2h |
| 325 | 1.9.1.1 | **Analysys** |  | 2d | 2018-06-12 | 2018-06-14 |  | 3d | 0d |  |  | 4.2h |
| 326 | 1.9.1.1.1 | Execution |  | 1d | 2018-06-12 | 2018-06-14 |  | 3d | 0d | start no earlier than 2018-02-05 | André Gonçalo Bernardo Nunes [37.5%] | 3h |
| 327 | 1.9.1.1.2 | Testing |  | 0.5d | 2018-06-14 | 2018-06-14 | 326 | 3d |  | finish no earlier than 2018-02-06 | Ana Catarina Pacheco De Sousa [30%] | 1.2h |
| 328 | 1.9.1.2 | Analysys Completed | milestone | 0d | 2018-06-14 | 2018-06-14 | 325 | 3d | 0d | finish no earlier than 2018-02-05 |  |  |
| 329 | 1.9.1.3 | **Design** |  | 1.5d | 2018-06-14 | 2018-06-18 | 328 | 3d | 0d |  |  | 4.3h |
| 330 | 1.9.1.3.1 | Execution |  | 1d | 2018-06-14 | 2018-06-15 |  | 3d | 0d | start no earlier than 2018-02-05 | Hugo Filipe Soares Veloso De Barros Curado [35%] | 2.8h |
| 331 | 1.9.1.3.2 | Testing |  | 0.5d | 2018-06-15 | 2018-06-18 | 330 | 3d |  | finish no earlier than 2018-02-05 | André Gonçalo Bernardo Nunes [37.5%] | 1.5h |
| 332 | 1.9.1.4 | Design Completed | milestone | 0d | 2018-06-18 | 2018-06-18 | 329 | 3d | 0d | finish no earlier than 2018-02-05 |  |  |
| 333 | 1.9.1.5 | **Implementation** |  | 3.5d | 2018-06-18 | 2018-06-21 | 332 | 2.5d | 0d |  |  | 23.7h |
| 334 | 1.9.1.5.1 | **FrontEnd** |  | 2d | 2018-06-18 | 2018-06-20 |  | 4d | 0d |  |  | 10.5h |
| 335 | 1.9.1.5.1.1 | Add route to routes db |  | 0.5d | 2018-06-18 | 2018-06-18 |  | 4d | 0d | start no earlier than 2018-02-06 | Patrícia Alexandra Dias De Jesus [45%] | 1.8h |
| 336 | 1.9.1.5.1.2 | Develop controller |  | 1.5d | 2018-06-18 | 2018-06-20 | 335 | 4d |  | start no earlier than 2018-02-07 | André Gonçalo Bernardo Nunes [37.5%] | 4.5h |
| 337 | 1.9.1.5.1.3 | Develop view |  | 1.5d | 2018-06-18 | 2018-06-20 |  | 4d |  | finish no earlier than 2018-02-07 | Hugo Filipe Soares Veloso De Barros Curado [35%] | 4.2h |
| 338 | 1.9.1.5.2 | FrontEnd Completed | milestone | 0d | 2018-06-20 | 2018-06-20 | 334 | 4d |  | finish no earlier than 2018-02-07 |  |  |
| 339 | 1.9.1.5.3 | **BackEnd** |  | 3.5d | 2018-06-18 | 2018-06-21 |  | 2.5d | 0d |  |  | 10.8h |
| 340 | 1.9.1.5.3.1 | Add route to routes file |  | 0.5d | 2018-06-18 | 2018-06-18 |  | 4d | 1.5d |  | Ana Catarina Pacheco De Sousa [30%] | 1.2h |
| 341 | 1.9.1.5.3.2 | Develop Model |  | 1.5d | 2018-06-18 | 2018-06-20 |  | 2.5d | 0d | finish no earlier than 2018-02-12 | Patrícia Alexandra Dias De Jesus [45%] | 5.4h |
| 342 | 1.9.1.5.3.3 | Develop Controller |  | 1.5d | 2018-06-20 | 2018-06-21 | 340, 341 | 2.5d |  | start no earlier than 2018-02-14 | Hugo Filipe Soares Veloso De Barros Curado [35%] | 4.2h |
| 343 | 1.9.1.5.4 | BackEnd Completed | milestone | 0d | 2018-06-21 | 2018-06-21 | 339 | 2.5d |  | finish no earlier than 2018-02-14 |  |  |
| 344 | 1.9.1.5.5 | **Networking & Security** |  | 1d | 2018-06-18 | 2018-06-19 |  | 4.5d | 0d |  |  | 2.4h |
| 345 | 1.9.1.5.5.1 | General security procidures |  | 1d | 2018-06-18 | 2018-06-19 |  | 4.5d |  | start no earlier than 2018-02-14 | Ana Catarina Pacheco De Sousa [30%] | 2.4h |
| 346 | 1.9.1.5.6 | Networking & Security Completed | milestone | 0d | 2018-06-19 | 2018-06-19 | 344 | 4.5d |  | finish no earlier than 2018-02-14 |  |  |
| 347 | 1.9.1.6 | Implementation Completed | milestone | 0d | 2018-06-21 | 2018-06-21 | 333 | 2.5d |  | finish no earlier than 2018-02-12 |  |  |

| ID | WBS | Task | Type | Duration | Start | Finish | Predecessors | Total slack | Free slack | Constraint | Resources | Work |
| --- | --- | --- | --- | --- | --- | --- | --- | --- | --- | --- | --- | --- |
| 348 | 1.9.1.7 | **Testing** |  | 1.5d | 2018-06-14 | 2018-06-15 | 247 | 5.5d | 0d |  |  | 4.2h |
| 349 | 1.9.1.7.1 | Building |  | 1d | 2018-06-14 | 2018-06-15 |  | 5.5d | 0d | start no earlier than 2018-02-14 | André Gonçalo Bernardo Nunes [37.5%] | 3h |
| 350 | 1.9.1.7.2 | Testing |  | 0.5d | 2018-06-15 | 2018-06-15 | 349 | 5.5d |  | start no earlier than 2018-02-12 | Pedro Duarte Neto [30%] | 1.2h |
| 351 | 1.9.1.8 | Testing Completed | milestone | 0d | 2018-06-15 | 2018-06-15 | 348 | 5.5d | 0d | finish no earlier than 2018-02-13 |  |  |
| 352 | 1.9.1.9 | Deployment |  | 1d | 2018-06-15 | 2018-06-18 | 351 | 5.5d | 0d | finish no earlier than 2018-02-13 | Hugo Filipe Soares Veloso De Barros Curado [35%] | 2.8h |
| 353 | 1.9.1.10 | Deployment Completed | milestone | 0d | 2018-06-18 | 2018-06-18 | 352 | 5.5d |  | finish no earlier than 2018-02-13 |  |  |
| 354 | 1.9.2 | Consultar presenças dos alunos Completed | milestone | 0d | 2018-06-21 | 2018-06-21 | 324 | 2.5d | 0d | finish no earlier than 2018-02-13 |  |  |
| 355 | 1.9.3 | **Marcação de salas para avaliações** |  | 8.5d | 2018-06-21 | 2018-07-04 | 354 | 2.5d | 0d |  |  | 35.5h |
| 356 | 1.9.3.1 | **Analysys** |  | 1.5d | 2018-06-21 | 2018-06-25 |  | 2.5d | 0d |  |  | 4.2h |
| 357 | 1.9.3.1.1 | Execution |  | 1d | 2018-06-21 | 2018-06-22 |  | 2.5d | 0d | start no earlier than 2018-02-05 | Ana Catarina Pacheco De Sousa [30%] | 2.4h |
| 358 | 1.9.3.1.2 | Testing |  | 0.5d | 2018-06-22 | 2018-06-25 | 357 | 2.5d |  | finish no earlier than 2018-02-05 | Patrícia Alexandra Dias De Jesus [45%] | 1.8h |
| 359 | 1.9.3.2 | Analysys Completed | milestone | 0d | 2018-06-25 | 2018-06-25 | 356 | 2.5d | 0d | finish no earlier than 2018-02-05 |  |  |
| 360 | 1.9.3.3 | **Design** |  | 1.5d | 2018-06-25 | 2018-06-26 | 359 | 2.5d | 0d |  |  | 3.6h |
| 361 | 1.9.3.3.1 | Execution |  | 1d | 2018-06-25 | 2018-06-26 |  | 2.5d | 0d | start no earlier than 2018-02-05 | Pedro Duarte Neto [30%] | 2.4h |
| 362 | 1.9.3.3.2 | Testing |  | 0.5d | 2018-06-26 | 2018-06-26 | 361 | 2.5d |  | finish no earlier than 2018-02-05 | Ana Catarina Pacheco De Sousa [30%] | 1.2h |
| 363 | 1.9.3.4 | Design Completed | milestone | 0d | 2018-06-26 | 2018-06-26 | 360 | 2.5d | 0d | finish no earlier than 2018-02-05 |  |  |
| 364 | 1.9.3.5 | **Implementation** |  | 3d | 2018-06-26 | 2018-06-29 | 363 | 2.5d | 0d |  |  | 20.7h |
| 365 | 1.9.3.5.1 | **FrontEnd** |  | 3d | 2018-06-26 | 2018-06-29 |  | 2.5d | 0d |  |  | 9.3h |
| 366 | 1.9.3.5.1.1 | Add route to routes db |  | 0.5d | 2018-06-26 | 2018-06-27 |  | 2.92d | 0d | start no earlier than 2018-02-05 | André Gonçalo Bernardo Nunes [37.5%] | 1.5h |
| 367 | 1.9.3.5.1.2 | Develop controller |  | 1.5d | 2018-06-28 | 2018-06-29 | 366 | 2.5d |  | finish no earlier than 2018-02-05 | Hugo Filipe Soares Veloso De Barros Curado [35%] | 4.2h |
| 368 | 1.9.3.5.1.3 | Develop view |  | 1.5d | 2018-06-26 | 2018-06-28 |  | 4d |  | start no earlier than 2018-02-05 | Pedro Duarte Neto [30%] | 3.6h |
| 369 | 1.9.3.5.2 | FrontEnd Completed | milestone | 0d | 2018-06-29 | 2018-06-29 | 365 | 2.5d |  | finish no earlier than 2018-02-07 |  |  |
| 370 | 1.9.3.5.3 | **BackEnd** |  | 3d | 2018-06-26 | 2018-06-29 |  | 2.5d | 0d |  |  | 9h |
| 371 | 1.9.3.5.3.1 | Add route to routes file |  | 0.5d | 2018-06-26 | 2018-06-27 |  | 3.5d | 1d | start no earlier than 2018-02-05 | Ana Catarina Pacheco De Sousa [30%] | 1.2h |
| 372 | 1.9.3.5.3.2 | Develop Model |  | 1.5d | 2018-06-26 | 2018-06-28 |  | 2.5d | 0d | start no earlier than 2018-02-12 | Hugo Filipe Soares Veloso De Barros Curado [35%] | 4.2h |
| 373 | 1.9.3.5.3.3 | Develop Controller |  | 1.5d | 2018-06-28 | 2018-06-29 | 371, 372 | 2.5d |  | finish no earlier than 2018-02-05 | Pedro Duarte Neto [30%] | 3.6h |
| 374 | 1.9.3.5.4 | BackEnd Completed | milestone | 0d | 2018-06-29 | 2018-06-29 | 370 | 2.5d |  | finish no earlier than 2018-02-08 |  |  |

| ID | WBS | Task | Type | Duration | Start | Finish | Predecessors | Total slack | Free slack | Constraint | Resources | Work |
| --- | --- | --- | --- | --- | --- | --- | --- | --- | --- | --- | --- | --- |
| 375 | 1.9.3.5.5 | **Networking & Security** |  | 1d | 2018-06-27 | 2018-06-28 |  | 4d | 0d |  |  | 2.4h |
| 376 | 1.9.3.5.5.1 | General security procidures |  | 1d | 2018-06-27 | 2018-06-28 |  | 4d |  | start no earlier than 2018-02-12 | Ana Catarina Pacheco De Sousa [30%] | 2.4h |
| 377 | 1.9.3.5.6 | Networking & Security Completed | milestone | 0d | 2018-06-28 | 2018-06-28 | 375 | 4d |  | finish no earlier than 2018-02-07 |  |  |
| 378 | 1.9.3.6 | Implementation Completed | milestone | 0d | 2018-06-29 | 2018-06-29 | 364 | 2.5d | 0d | finish no earlier than 2018-02-12 |  |  |
| 379 | 1.9.3.7 | **Testing** |  | 1.5d | 2018-06-29 | 2018-07-03 | 378 | 2.5d | 0d |  |  | 4h |
| 380 | 1.9.3.7.1 | Building |  | 1d | 2018-06-29 | 2018-07-02 |  | 2.5d | 0d | start no earlier than 2018-02-12 | Hugo Filipe Soares Veloso De Barros Curado [35%] | 2.8h |
| 381 | 1.9.3.7.2 | Testing |  | 0.5d | 2018-07-02 | 2018-07-03 | 380 | 2.5d |  | finish no earlier than 2018-02-12 | Pedro Duarte Neto [30%] | 1.2h |
| 382 | 1.9.3.8 | Testing Completed | milestone | 0d | 2018-07-03 | 2018-07-03 | 379 | 2.5d | 0d | finish no earlier than 2018-02-12 |  |  |
| 383 | 1.9.3.9 | Deployment |  | 1d | 2018-07-03 | 2018-07-04 | 382 | 2.5d | 0d | finish no earlier than 2018-02-13 | André Gonçalo Bernardo Nunes [37.5%] | 3h |
| 384 | 1.9.3.10 | Deployment Completed | milestone | 0d | 2018-07-04 | 2018-07-04 | 383 | 2.5d |  | finish no earlier than 2018-02-05 |  |  |
| 385 | 1.9.4 | Marcação de salas para avaliações Completed | milestone | 0d | 2018-07-04 | 2018-07-04 | 355 | 2.5d | 0d | finish no earlier than 2018-02-13 |  |  |
| 386 | 1.9.5 | **Consulta de quantas pessoas estão num determinado espaço** |  | 9d | 2018-07-04 | 2018-07-17 | 385 | 2d | 0d |  |  | 34.9h |
| 387 | 1.9.5.1 | **Analysys** |  | 1.5d | 2018-07-04 | 2018-07-05 |  | 2.5d | 0d |  |  | 3.8h |
| 388 | 1.9.5.1.1 | Execution |  | 1d | 2018-07-04 | 2018-07-05 |  | 2.5d | 0d | start no earlier than 2018-02-05 | Ana Catarina Pacheco De Sousa [30%] | 2.4h |
| 389 | 1.9.5.1.2 | Testing |  | 0.5d | 2018-07-05 | 2018-07-05 | 388 | 2.5d |  | start no earlier than 2018-02-05 | Hugo Filipe Soares Veloso De Barros Curado [35%] | 1.4h |
| 390 | 1.9.5.2 | Analysys Completed | milestone | 0d | 2018-07-05 | 2018-07-05 | 387 | 2.5d | 0d | start no earlier than 2018-02-05 |  |  |
| 391 | 1.9.5.3 | **Design** |  | 1.5d | 2018-07-05 | 2018-07-09 | 390 | 2.5d | 0d |  |  | 4.8h |
| 392 | 1.9.5.3.1 | Execution |  | 1d | 2018-07-05 | 2018-07-06 |  | 2.5d | 0d | start no earlier than 2018-02-05 | André Gonçalo Bernardo Nunes [37.5%] | 3h |
| 393 | 1.9.5.3.2 | Testing |  | 0.5d | 2018-07-06 | 2018-07-09 | 392 | 2.5d |  | start no earlier than 2018-02-05 | Patrícia Alexandra Dias De Jesus [45%] | 1.8h |
| 394 | 1.9.5.4 | Design Completed | milestone | 0d | 2018-07-09 | 2018-07-09 | 391 | 2.5d | 0d | start no earlier than 2018-02-05 |  |  |
| 395 | 1.9.5.5 | **Implementation** |  | 3.5d | 2018-07-09 | 2018-07-12 | 394 | 2d | 0d |  |  | 22.1h |
| 396 | 1.9.5.5.1 | **FrontEnd** |  | 3.5d | 2018-07-09 | 2018-07-12 |  | 2d | 0d |  |  | 9.5h |
| 397 | 1.9.5.5.1.1 | Develop controller |  | 0.5d | 2018-07-12 | 2018-07-12 | 399 | 2d |  | start no earlier than 2018-02-05 | Hugo Filipe Soares Veloso De Barros Curado [35%] | 1.4h |
| 398 | 1.9.5.5.1.2 | Develop view |  | 1.5d | 2018-07-09 | 2018-07-10 |  | 4d |  | start no earlier than 2018-02-05 | André Gonçalo Bernardo Nunes [37.5%] | 4.5h |
| 399 | 1.9.5.5.1.3 | Add route to routes db |  | 1.5d | 2018-07-10 | 2018-07-12 |  | 2d | 0d | start no earlier than 2018-02-05 | Ana Catarina Pacheco De Sousa [30%] | 3.6h |
| 400 | 1.9.5.5.2 | FrontEnd Completed | milestone | 0d | 2018-07-12 | 2018-07-12 | 396 | 2d |  | start no earlier than 2018-02-07 |  |  |

| ID | WBS | Task | Type | Duration | Start | Finish | Predecessors | Total slack | Free slack | Constraint | Resources | Work |
| --- | --- | --- | --- | --- | --- | --- | --- | --- | --- | --- | --- | --- |
| 401 | 1.9.5.5.3 | **BackEnd** |  | 3d | 2018-07-09 | 2018-07-12 |  | 2.5d | 0d |  |  | 9h |
| 402 | 1.9.5.5.3.1 | Add route to routes file |  | 0.5d | 2018-07-09 | 2018-07-09 |  | 3.5d | 1d | start no earlier than 2018-02-05 | Pedro Duarte Neto [30%] | 1.2h |
| 403 | 1.9.5.5.3.2 | Develop Controller |  | 1.5d | 2018-07-10 | 2018-07-12 | 402, 404 | 2.5d |  | start no earlier than 2018-02-05 | Hugo Filipe Soares Veloso De Barros Curado [35%] | 4.2h |
| 404 | 1.9.5.5.3.3 | Develop Model |  | 1.5d | 2018-07-09 | 2018-07-10 |  | 2.5d | 0d | start no earlier than 2018-02-12 | Ana Catarina Pacheco De Sousa [30%] | 3.6h |
| 405 | 1.9.5.5.4 | BackEnd Completed | milestone | 0d | 2018-07-12 | 2018-07-12 | 401 | 2.5d |  | start no earlier than 2018-02-07 |  |  |
| 406 | 1.9.5.5.5 | **Networking & Security** |  | 1d | 2018-07-09 | 2018-07-10 |  | 4.5d | 0d |  |  | 3.6h |
| 407 | 1.9.5.5.5.1 | General security procidures |  | 1d | 2018-07-09 | 2018-07-10 |  | 4.5d |  | start no earlier than 2018-02-12 | Patrícia Alexandra Dias De Jesus [45%] | 3.6h |
| 408 | 1.9.5.5.6 | Networking & Security Completed | milestone | 0d | 2018-07-10 | 2018-07-10 | 406 | 4.5d |  | start no earlier than 2018-02-07 |  |  |
| 409 | 1.9.5.6 | Implementation Completed | milestone | 0d | 2018-07-12 | 2018-07-12 | 395 | 2d | 0d | start no earlier than 2018-02-12 |  |  |
| 410 | 1.9.5.7 | **Testing** |  | 1.5d | 2018-07-12 | 2018-07-16 | 409 | 2d | 0d |  |  | 4.2h |
| 411 | 1.9.5.7.1 | Building |  | 1d | 2018-07-12 | 2018-07-13 |  | 2d | 0d | start no earlier than 2018-02-12 | André Gonçalo Bernardo Nunes [37.5%] | 3h |
| 412 | 1.9.5.7.2 | Testing |  | 0.5d | 2018-07-13 | 2018-07-16 | 411 | 2d |  | start no earlier than 2018-02-12 | Pedro Duarte Neto [30%] | 1.2h |
| 413 | 1.9.5.8 | Testing Completed | milestone | 0d | 2018-07-16 | 2018-07-16 | 410 | 2d | 0d | start no earlier than 2018-02-12 |  |  |
| 414 | 1.9.5.9 | Deployment |  | 1d | 2018-07-16 | 2018-07-17 | 413 | 2d | 0d | start no earlier than 2018-02-13 |  |  |
| 415 | 1.9.5.10 | Deployment Completed | milestone | 0d | 2018-07-17 | 2018-07-17 | 414 | 2d |  | start no earlier than 2018-02-05 |  |  |
| 416 | 1.9.6 | Consulta de quantas pessoas estão num determinado espaço Completed | milestone | 0d | 2018-07-17 | 2018-07-17 | 386 | 2d |  | start no earlier than 2018-02-13 |  |  |
| 417 | 1.10 | Fourth Iteration Completed | milestone | 0d | 2018-07-17 | 2018-07-17 | 323 | 2d | 0d | finish no earlier than 2018-02-16 |  |  |
| 418 | 1.11 | **Fifth Iteration** |  | 29d | 2018-07-17 | 2018-08-27 | 417 | 1.5d | 0d |  |  | 108.5h |
| 419 | 1.11.1 | **Criar acessos temporário** |  | 11.5d | 2018-07-17 | 2018-08-01 |  | 2d | 0d |  |  | 36.9h |
| 420 | 1.11.1.1 | **Analysys** |  | 1.5d | 2018-07-17 | 2018-07-18 |  | 2d | 0d |  |  | 4.2h |
| 421 | 1.11.1.1.1 | Execution |  | 1d | 2018-07-17 | 2018-07-18 |  | 2d | 0d | start no earlier than 2018-02-05 | Ana Catarina Pacheco De Sousa [30%] | 2.4h |
| 422 | 1.11.1.1.2 | Testing |  | 0.5d | 2018-07-18 | 2018-07-18 | 421 | 2d |  |  | Patrícia Alexandra Dias De Jesus [45%] | 1.8h |
| 423 | 1.11.1.2 | Analysys Completed | milestone | 0d | 2018-07-18 | 2018-07-18 | 420 | 2d | 0d |  |  |  |
| 424 | 1.11.1.3 | **Design** |  | 1.5d | 2018-07-18 | 2018-07-20 | 423 | 2d | 0d |  |  | 4.4h |
| 425 | 1.11.1.3.1 | Execution |  | 1d | 2018-07-18 | 2018-07-19 |  | 2d | 0d |  | André Gonçalo Bernardo Nunes [37.5%] | 3h |
| 426 | 1.11.1.3.2 | Testing |  | 0.5d | 2018-07-19 | 2018-07-20 | 425 | 2d |  |  | Hugo Filipe Soares Veloso De Barros Curado [35%] | 1.4h |
| 427 | 1.11.1.4 | Design Completed | milestone | 0d | 2018-07-20 | 2018-07-20 | 424 | 2d | 0d |  |  |  |

| ID | WBS | Task | Type | Duration | Start | Finish | Predecessors | Total slack | Free slack | Constraint | Resources | Work |
| --- | --- | --- | --- | --- | --- | --- | --- | --- | --- | --- | --- | --- |
| 428 | 1.11.1.5 | **Implementation** |  | 6d | 2018-07-20 | 2018-07-30 | 427 | 2d | 0d |  |  | 21.29h |
| 429 | 1.11.1.5.1 | **FrontEnd** |  | 2d | 2018-07-20 | 2018-07-24 |  | 2d | 0d |  |  | 9.89h |
| 430 | 1.11.1.5.1.1 | Add route to routes db |  | 0.5d | 2018-07-20 | 2018-07-20 |  | 2d | 0d |  | Pedro Duarte Neto [30%] | 1.19h |
| 431 | 1.11.1.5.1.2 | Develop controller |  | 1.5d | 2018-07-20 | 2018-07-24 | 430 | 2d |  |  | André Gonçalo Bernardo Nunes [37.5%] | 4.5h |
| 432 | 1.11.1.5.1.3 | Develop view |  | 1.5d | 2018-07-20 | 2018-07-23 |  | 2.5d |  |  | Hugo Filipe Soares Veloso De Barros Curado [35%] | 4.2h |
| 433 | 1.11.1.5.2 | FrontEnd Completed | milestone | 0d | 2018-07-24 | 2018-07-24 | 429 | 2d | 0d | start no earlier than 2018-02-07 |  |  |
| 434 | 1.11.1.5.3 | **BackEnd** |  | 3d | 2018-07-24 | 2018-07-27 | 433 | 2d | 0d |  |  | 9h |
| 435 | 1.11.1.5.3.1 | Add route to routes file |  | 0.5d | 2018-07-24 | 2018-07-24 |  | 3d | 1d |  | Ana Catarina Pacheco De Sousa [30%] | 1.19h |
| 436 | 1.11.1.5.3.2 | Develop Model |  | 1.5d | 2018-07-24 | 2018-07-25 |  | 2d | 0d | start no earlier than 2018-02-12 | Pedro Duarte Neto [30%] | 3.61h |
| 437 | 1.11.1.5.3.3 | Develop Controller |  | 1.5d | 2018-07-25 | 2018-07-27 | 435, 436 | 2d |  |  | Hugo Filipe Soares Veloso De Barros Curado [35%] | 4.2h |
| 438 | 1.11.1.5.4 | BackEnd Completed | milestone | 0d | 2018-07-27 | 2018-07-27 | 434 | 2d | 0d | start no earlier than 2018-02-08 |  |  |
| 439 | 1.11.1.5.5 | **Networking & Security** |  | 1d | 2018-07-27 | 2018-07-30 | 438 | 2d | 0d |  |  | 2.4h |
| 440 | 1.11.1.5.5.1 | General security procidures |  | 1d | 2018-07-27 | 2018-07-30 |  | 2d |  | start no earlier than 2018-02-12 | Ana Catarina Pacheco De Sousa [30%] | 2.4h |
| 441 | 1.11.1.5.6 | Networking & Security Completed | milestone | 0d | 2018-07-30 | 2018-07-30 | 439 | 2d |  | start no earlier than 2018-02-07 |  |  |
| 442 | 1.11.1.6 | Implementation Completed | milestone | 0d | 2018-07-30 | 2018-07-30 | 428 | 2d | 0d | start no earlier than 2018-02-12 |  |  |
| 443 | 1.11.1.7 | **Testing** |  | 1.5d | 2018-07-30 | 2018-07-31 | 442 | 2d | 0d |  |  | 4h |
| 444 | 1.11.1.7.1 | Building |  | 1d | 2018-07-30 | 2018-07-31 |  | 2d | 0d | start no earlier than 2018-02-12 | Hugo Filipe Soares Veloso De Barros Curado [35%] | 2.8h |
| 445 | 1.11.1.7.2 | Testing |  | 0.5d | 2018-07-31 | 2018-07-31 | 444 | 2d |  | start no earlier than 2018-02-12 | Pedro Duarte Neto [30%] | 1.2h |
| 446 | 1.11.1.8 | Testing Completed | milestone | 0d | 2018-07-31 | 2018-07-31 | 443 | 2d | 0d | start no earlier than 2018-02-12 |  |  |
| 447 | 1.11.1.9 | Deployment |  | 1d | 2018-07-31 | 2018-08-01 | 446 | 2d | 0d | start no earlier than 2018-02-13 | André Gonçalo Bernardo Nunes [37.5%] | 3h |
| 448 | 1.11.1.10 | Deployment Completed | milestone | 0d | 2018-08-01 | 2018-08-01 | 447 | 2d |  |  |  |  |
| 449 | 1.11.2 | Criar acessos temporário Completed | milestone | 0d | 2018-08-01 | 2018-08-01 | 419 | 2d | 0d | start no earlier than 2018-02-13 |  |  |
| 450 | 1.11.3 | **Consulta de quantas pessoas estão num determinado espaço** |  | 9d | 2018-08-01 | 2018-08-14 | 449 | 1.5d | 0d |  |  | 34.9h |
| 451 | 1.11.3.1 | **Analysys** |  | 1.5d | 2018-08-01 | 2018-08-03 |  | 2d | 0d |  |  | 3.8h |
| 452 | 1.11.3.1.1 | Execution |  | 1d | 2018-08-01 | 2018-08-02 |  | 2d | 0d | start no earlier than 2018-02-05 | Ana Catarina Pacheco De Sousa [30%] | 2.4h |
| 453 | 1.11.3.1.2 | Testing |  | 0.5d | 2018-08-02 | 2018-08-03 | 452 | 2d |  | start no earlier than 2018-02-05 | Hugo Filipe Soares Veloso De Barros Curado [35%] | 1.4h |
| 454 | 1.11.3.2 | Analysys Completed | milestone | 0d | 2018-08-03 | 2018-08-03 | 451 | 2d | 0d | start no earlier than 2018-02-05 |  |  |

| ID | WBS | Task | Type | Duration | Start | Finish | Predecessors | Total slack | Free slack | Constraint | Resources | Work |
| --- | --- | --- | --- | --- | --- | --- | --- | --- | --- | --- | --- | --- |
| 455 | 1.11.3.3 | **Design** |  | 1.5d | 2018-08-03 | 2018-08-06 | 454 | 2d | 0d |  |  | 4.8h |
| 456 | 1.11.3.3.1 | Execution |  | 1d | 2018-08-03 | 2018-08-06 |  | 2d | 0d | start no earlier than 2018-02-05 | André Gonçalo Bernardo Nunes [37.5%] | 3h |
| 457 | 1.11.3.3.2 | Testing |  | 0.5d | 2018-08-06 | 2018-08-06 | 456 | 2d |  | start no earlier than 2018-02-05 | Patrícia Alexandra Dias De Jesus [45%] | 1.8h |
| 458 | 1.11.3.4 | Design Completed | milestone | 0d | 2018-08-06 | 2018-08-06 | 455 | 2d | 0d | start no earlier than 2018-02-05 |  |  |
| 459 | 1.11.3.5 | **Implementation** |  | 3.5d | 2018-08-06 | 2018-08-10 | 458 | 1.5d | 0d |  |  | 22.1h |
| 460 | 1.11.3.5.1 | **FrontEnd** |  | 3.5d | 2018-08-06 | 2018-08-10 |  | 1.5d | 0d |  |  | 9.5h |
| 461 | 1.11.3.5.1.1 | Develop controller |  | 0.5d | 2018-08-09 | 2018-08-10 | 463 | 1.5d |  | start no earlier than 2018-02-05 | Hugo Filipe Soares Veloso De Barros Curado [35%] | 1.4h |
| 462 | 1.11.3.5.1.2 | Develop view |  | 1.5d | 2018-08-06 | 2018-08-08 |  | 3.5d |  | start no earlier than 2018-02-05 | André Gonçalo Bernardo Nunes [37.5%] | 4.5h |
| 463 | 1.11.3.5.1.3 | Add route to routes db |  | 1.5d | 2018-08-08 | 2018-08-09 |  | 1.5d | 0d | start no earlier than 2018-02-05 | Ana Catarina Pacheco De Sousa [30%] | 3.6h |
| 464 | 1.11.3.5.2 | FrontEnd Completed | milestone | 0d | 2018-08-10 | 2018-08-10 | 460 | 1.5d |  | start no earlier than 2018-02-07 |  |  |
| 465 | 1.11.3.5.3 | **BackEnd** |  | 3d | 2018-08-06 | 2018-08-09 |  | 2d | 0d |  |  | 9h |
| 466 | 1.11.3.5.3.1 | Add route to routes file |  | 0.5d | 2018-08-06 | 2018-08-07 |  | 3d | 1d | start no earlier than 2018-02-05 | Pedro Duarte Neto [30%] | 1.2h |
| 467 | 1.11.3.5.3.2 | Develop Controller |  | 1.5d | 2018-08-08 | 2018-08-09 | 466, 468 | 2d |  | start no earlier than 2018-02-05 | Hugo Filipe Soares Veloso De Barros Curado [35%] | 4.2h |
| 468 | 1.11.3.5.3.3 | Develop Model |  | 1.5d | 2018-08-06 | 2018-08-08 |  | 2d | 0d | start no earlier than 2018-02-12 | Ana Catarina Pacheco De Sousa [30%] | 3.6h |
| 469 | 1.11.3.5.4 | BackEnd Completed | milestone | 0d | 2018-08-09 | 2018-08-09 | 465 | 2d |  | start no earlier than 2018-02-07 |  |  |
| 470 | 1.11.3.5.5 | **Networking & Security** |  | 1d | 2018-08-06 | 2018-08-07 |  | 4d | 0d |  |  | 3.6h |
| 471 | 1.11.3.5.5.1 | General security procidures |  | 1d | 2018-08-06 | 2018-08-07 |  | 4d |  | start no earlier than 2018-02-12 | Patrícia Alexandra Dias De Jesus [45%] | 3.6h |
| 472 | 1.11.3.5.6 | Networking & Security Completed | milestone | 0d | 2018-08-07 | 2018-08-07 | 470 | 4d |  | start no earlier than 2018-02-07 |  |  |
| 473 | 1.11.3.6 | Implementation Completed | milestone | 0d | 2018-08-10 | 2018-08-10 | 459 | 1.5d | 0d | start no earlier than 2018-02-12 |  |  |
| 474 | 1.11.3.7 | **Testing** |  | 1.5d | 2018-08-10 | 2018-08-13 | 473 | 1.5d | 0d |  |  | 4.2h |
| 475 | 1.11.3.7.1 | Building |  | 1d | 2018-08-10 | 2018-08-13 |  | 1.5d | 0d | start no earlier than 2018-02-12 | André Gonçalo Bernardo Nunes [37.5%] | 3h |
| 476 | 1.11.3.7.2 | Testing |  | 0.5d | 2018-08-13 | 2018-08-13 | 475 | 1.5d |  | start no earlier than 2018-02-12 | Pedro Duarte Neto [30%] | 1.2h |
| 477 | 1.11.3.8 | Testing Completed | milestone | 0d | 2018-08-13 | 2018-08-13 | 474 | 1.5d | 0d | start no earlier than 2018-02-12 |  |  |
| 478 | 1.11.3.9 | Deployment |  | 1d | 2018-08-13 | 2018-08-14 | 477 | 1.5d | 0d | start no earlier than 2018-02-13 |  |  |
| 479 | 1.11.3.10 | Deployment Completed | milestone | 0d | 2018-08-14 | 2018-08-14 | 478 | 1.5d |  | start no earlier than 2018-02-05 |  |  |
| 480 | 1.11.4 | Consulta de quantas pessoas estão num determinado espaço Completed | milestone | 0d | 2018-08-14 | 2018-08-14 | 450 | 1.5d | 0d | start no earlier than 2018-02-13 |  |  |

| ID | WBS | Task | Type | Duration | Start | Finish | Predecessors | Total slack | Free slack | Constraint | Resources | Work |
| --- | --- | --- | --- | --- | --- | --- | --- | --- | --- | --- | --- | --- |
| 481 | 1.11.5 | **Bloqueio de acessos** |  | 8.5d | 2018-08-14 | 2018-08-27 | 480 | 1.5d | 0d |  |  | 36.7h |
| 482 | 1.11.5.1 | **Analysys** |  | 1.5d | 2018-08-14 | 2018-08-16 |  | 1.5d | 0d |  |  | 4.2h |
| 483 | 1.11.5.1.1 | Execution |  | 1d | 2018-08-14 | 2018-08-15 |  | 1.5d | 0d | finish no earlier than 2018-02-05 | André Gonçalo Bernardo Nunes [37.5%] | 3h |
| 484 | 1.11.5.1.2 | Testing |  | 0.5d | 2018-08-15 | 2018-08-16 | 483 | 1.5d |  | finish no earlier than 2018-02-05 | Ana Catarina Pacheco De Sousa [30%] | 1.2h |
| 485 | 1.11.5.2 | Analysys Completed | milestone | 0d | 2018-08-16 | 2018-08-16 | 482 | 1.5d | 0d | start no earlier than 2018-02-05 |  |  |
| 486 | 1.11.5.3 | **Design** |  | 1.5d | 2018-08-16 | 2018-08-17 | 485 | 1.5d | 0d |  |  | 5h |
| 487 | 1.11.5.3.1 | Execution |  | 1d | 2018-08-16 | 2018-08-17 |  | 1.5d | 0d | finish no earlier than 2018-02-05 | Patrícia Alexandra Dias De Jesus [45%] | 3.6h |
| 488 | 1.11.5.3.2 | Testing |  | 0.5d | 2018-08-17 | 2018-08-17 | 487 | 1.5d |  | finish no earlier than 2018-02-05 | Hugo Filipe Soares Veloso De Barros Curado [35%] | 1.4h |
| 489 | 1.11.5.4 | Design Completed | milestone | 0d | 2018-08-17 | 2018-08-17 | 486 | 1.5d | 0d | start no earlier than 2018-02-05 |  |  |
| 490 | 1.11.5.5 | **Implementation** |  | 3d | 2018-08-17 | 2018-08-22 | 489 | 1.5d | 0d |  |  | 20.3h |
| 491 | 1.11.5.5.1 | **FrontEnd** |  | 3d | 2018-08-17 | 2018-08-22 |  | 1.5d |  |  |  | 8.7h |
| 492 | 1.11.5.5.1.1 | Develop controller |  | 0.5d | 2018-08-21 | 2018-08-21 | 494 | 2.5d |  | finish no earlier than 2018-02-05 | André Gonçalo Bernardo Nunes [37.5%] | 1.5h |
| 493 | 1.11.5.5.1.2 | Develop view |  | 1.5d | 2018-08-21 | 2018-08-22 |  | 1.5d |  | finish no earlier than 2018-02-05 | Ana Catarina Pacheco De Sousa [30%] | 3.6h |
| 494 | 1.11.5.5.1.3 | Add route to routes db |  | 1.5d | 2018-08-17 | 2018-08-21 |  | 2.5d | 0d | finish no earlier than 2018-02-05 | Pedro Duarte Neto [30%] | 3.6h |
| 495 | 1.11.5.5.2 | FrontEnd Completed | milestone | 0d | 2018-08-17 | 2018-08-17 |  | 4.5d |  |  |  |  |
| 496 | 1.11.5.5.3 | **BackEnd** |  | 3d | 2018-08-17 | 2018-08-22 |  | 1.5d |  |  |  | 8.6h |
| 497 | 1.11.5.5.3.1 | Add route to routes file |  | 0.5d | 2018-08-17 | 2018-08-20 |  | 2.5d | 1d | finish no earlier than 2018-02-05 | Hugo Filipe Soares Veloso De Barros Curado [35%] | 1.4h |
| 498 | 1.11.5.5.3.2 | Develop Controller |  | 1.5d | 2018-08-21 | 2018-08-22 | 497, 499 | 1.5d |  | finish no earlier than 2018-02-05 | Pedro Duarte Neto [30%] | 3.6h |
| 499 | 1.11.5.5.3.3 | Develop Model |  | 1.5d | 2018-08-17 | 2018-08-21 |  | 1.5d | 0d | finish no earlier than 2018-02-12 | Ana Catarina Pacheco De Sousa [30%] | 3.6h |
| 500 | 1.11.5.5.4 | BackEnd Completed | milestone | 0d | 2018-08-17 | 2018-08-17 |  | 4.5d |  |  |  |  |
| 501 | 1.11.5.5.5 | **Networking & Security** |  | 1d | 2018-08-17 | 2018-08-20 |  | 3.5d |  |  |  | 3h |
| 502 | 1.11.5.5.5.1 | General security procidures |  | 1d | 2018-08-17 | 2018-08-20 |  | 3.5d |  | finish no earlier than 2018-02-12 | André Gonçalo Bernardo Nunes [37.5%] | 3h |
| 503 | 1.11.5.5.6 | Networking & Security Completed | milestone | 0d | 2018-08-17 | 2018-08-17 |  | 4.5d |  |  |  |  |
| 504 | 1.11.5.6 | Implementation Completed | milestone | 0d | 2018-08-22 | 2018-08-22 | 490 | 1.5d | 0d | start no earlier than 2018-02-12 |  |  |

| ID | WBS | Task | Type | Duration | Start | Finish | Predecessors | Total slack | Free slack | Constraint | Resources | Work |
| --- | --- | --- | --- | --- | --- | --- | --- | --- | --- | --- | --- | --- |
| 505 | 1.11.5.7 | **Testing** |  | 1.5d | 2018-08-22 | 2018-08-24 | 504 | 1.5d | 0d |  |  | 3.6h |
| 506 | 1.11.5.7.1 | Building |  | 1d | 2018-08-22 | 2018-08-23 |  | 1.5d | 0d | finish no earlier than 2018-02-12 | Pedro Duarte Neto [30%] | 2.4h |
| 507 | 1.11.5.7.2 | Testing |  | 0.5d | 2018-08-23 | 2018-08-24 | 506 | 1.5d |  | finish no earlier than 2018-02-12 | Ana Catarina Pacheco De Sousa [30%] | 1.2h |
| 508 | 1.11.5.8 | Testing Completed | milestone | 0d | 2018-08-24 | 2018-08-24 | 505 | 1.5d | 0d | start no earlier than 2018-02-12 |  |  |
| 509 | 1.11.5.9 | Deployment |  | 1d | 2018-08-24 | 2018-08-27 | 508 | 1.5d | 0d | finish no earlier than 2018-02-13 | Patrícia Alexandra Dias De Jesus [45%] | 3.6h |
| 510 | 1.11.5.10 | Deployment Completed | milestone | 0d | 2018-08-27 | 2018-08-27 | 509 | 1.5d |  | start no earlier than 2018-02-05 |  |  |
| 511 | 1.11.6 | Bloqueio de acessos Completed | milestone | 0d | 2018-08-27 | 2018-08-27 | 481 | 1.5d |  | start no earlier than 2018-02-13 |  |  |
| 512 | 1.12 | Fifth Iteration | milestone | 0d | 2018-08-27 | 2018-08-27 | 418 | 1.5d | 0d | finish no earlier than 2018-03-23 |  |  |
| 513 | 1.13 | **Sixth Iteration** |  | 19.5d | 2018-08-27 | 2018-09-21 | 512 | 0d |  |  |  | 156.8h |
| 514 | 1.13.1 | **Registo de novos utilizadores** |  | 9d | 2018-08-27 | 2018-09-07 |  | 1d | 0d |  |  | 37.7h |
| 515 | 1.13.1.1 | **Analysys** |  | 1.5d | 2018-08-27 | 2018-08-28 |  | 1.5d | 0d |  |  | 3.6h |
| 516 | 1.13.1.1.1 | Execution |  | 1d | 2018-08-27 | 2018-08-28 |  | 1.5d | 0d | finish no earlier than 2018-02-05 | Ana Catarina Pacheco De Sousa [30%] | 2.4h |
| 517 | 1.13.1.1.2 | Testing |  | 0.5d | 2018-08-28 | 2018-08-28 | 516 | 1.5d |  | finish no earlier than 2018-02-05 | Pedro Duarte Neto [30%] | 1.2h |
| 518 | 1.13.1.2 | Analysys Completed | milestone | 0d | 2018-08-28 | 2018-08-28 | 515 | 1.5d | 0d | finish no earlier than 2018-02-05 |  |  |
| 519 | 1.13.1.3 | **Design** |  | 1.5d | 2018-08-28 | 2018-08-30 | 518 | 1.5d | 0d |  |  | 4.6h |
| 520 | 1.13.1.3.1 | Execution |  | 1d | 2018-08-28 | 2018-08-29 |  | 1.5d | 0d | finish no earlier than 2018-02-05 | Hugo Filipe Soares Veloso De Barros Curado [35%] | 2.8h |
| 521 | 1.13.1.3.2 | Testing |  | 0.5d | 2018-08-29 | 2018-08-30 | 520 | 1.5d |  | finish no earlier than 2018-02-05 | Patrícia Alexandra Dias De Jesus [45%] | 1.8h |
| 522 | 1.13.1.4 | Design Completed | milestone | 0d | 2018-08-30 | 2018-08-30 | 519 | 1.5d | 0d | finish no earlier than 2018-02-05 |  |  |
| 523 | 1.13.1.5 | **Implementation** |  | 3.5d | 2018-08-30 | 2018-09-04 | 522 | 1d | 0d |  |  | 22.3h |
| 524 | 1.13.1.5.1 | **FrontEnd** |  | 3.5d | 2018-08-30 | 2018-09-04 |  | 1d |  |  |  | 9.3h |
| 525 | 1.13.1.5.1.1 | Develop controller |  | 0.5d | 2018-09-04 | 2018-09-04 | 527 | 1d |  | finish no earlier than 2018-02-05 | André Gonçalo Bernardo Nunes [37.5%] | 1.5h |
| 526 | 1.13.1.5.1.2 | Develop view |  | 1.5d | 2018-08-30 | 2018-08-31 |  | 3d |  | finish no earlier than 2018-02-05 | Hugo Filipe Soares Veloso De Barros Curado [35%] | 4.2h |
| 527 | 1.13.1.5.1.3 | Add route to routes db |  | 1.5d | 2018-08-31 | 2018-09-04 |  | 1d | 0d | finish no earlier than 2018-02-05 | Ana Catarina Pacheco De Sousa [30%] | 3.6h |
| 528 | 1.13.1.5.2 | FrontEnd Completed | milestone | 0d | 2018-08-30 | 2018-08-30 |  | 4.5d |  |  |  |  |

| ID | WBS | Task | Type | Duration | Start | Finish | Predecessors | Total slack | Free slack | Constraint | Resources | Work |
| --- | --- | --- | --- | --- | --- | --- | --- | --- | --- | --- | --- | --- |
| 529 | 1.13.1.5.3 | **BackEnd** |  | 3d | 2018-08-30 | 2018-09-04 |  | 1.5d |  |  |  | 10.2h |
| 530 | 1.13.1.5.3.1 | Add route to routes file |  | 0.5d | 2018-08-30 | 2018-08-30 |  | 2.5d | 1d | finish no earlier than 2018-02-05 | Pedro Duarte Neto [30%] | 1.2h |
| 531 | 1.13.1.5.3.2 | Develop Model |  | 1.5d | 2018-08-30 | 2018-08-31 |  | 1.5d | 0d | finish no earlier than 2018-02-12 | Ana Catarina Pacheco De Sousa [30%] | 3.6h |
| 532 | 1.13.1.5.3.3 | Develop Controller |  | 1.5d | 2018-08-31 | 2018-09-04 | 530, 531 | 1.5d |  | finish no earlier than 2018-02-05 | Patrícia Alexandra Dias De Jesus [45%] | 5.4h |
| 533 | 1.13.1.5.4 | BackEnd Completed | milestone | 0d | 2018-08-30 | 2018-08-30 |  | 4.5d |  |  |  |  |
| 534 | 1.13.1.5.5 | **Networking & Security** |  | 1d | 2018-08-31 | 2018-09-03 |  | 2d |  |  |  | 2.8h |
| 535 | 1.13.1.5.5.1 | General security procidures |  | 1d | 2018-08-31 | 2018-09-03 |  | 2d |  | finish no earlier than 2018-02-12 | Hugo Filipe Soares Veloso De Barros Curado [35%] | 2.8h |
| 536 | 1.13.1.5.6 | Networking & Security Completed | milestone | 0d | 2018-08-30 | 2018-08-30 |  | 4.5d |  |  |  |  |
| 537 | 1.13.1.6 | Implementation Completed | milestone | 0d | 2018-09-04 | 2018-09-04 | 523 | 1d | 0d | finish no earlier than 2018-02-12 |  |  |
| 538 | 1.13.1.7 | **Testing** |  | 1.5d | 2018-09-04 | 2018-09-06 | 537 | 1d | 0d |  |  | 3.6h |
| 539 | 1.13.1.7.1 | Building |  | 1d | 2018-09-04 | 2018-09-05 |  | 1d | 0d | finish no earlier than 2018-02-12 | Pedro Duarte Neto [30%] | 2.4h |
| 540 | 1.13.1.7.2 | Testing |  | 0.5d | 2018-09-05 | 2018-09-06 | 539 | 1d |  | finish no earlier than 2018-02-12 | Ana Catarina Pacheco De Sousa [30%] | 1.2h |
| 541 | 1.13.1.8 | Testing Completed | milestone | 0d | 2018-09-06 | 2018-09-06 | 538 | 1d | 0d | finish no earlier than 2018-02-12 |  |  |
| 542 | 1.13.1.9 | Deployment |  | 1d | 2018-09-06 | 2018-09-07 | 541 | 1d | 0d | finish no earlier than 2018-02-13 | Patrícia Alexandra Dias De Jesus [45%] | 3.6h |
| 543 | 1.13.1.10 | Deployment Completed | milestone | 0d | 2018-09-07 | 2018-09-07 | 542 | 1d |  | finish no earlier than 2018-02-05 |  |  |
| 544 | 1.13.2 | Registo de novos utilizadores Completed | milestone | 0d | 2018-09-07 | 2018-09-07 | 514 | 1d | 0d | finish no earlier than 2018-02-13 |  |  |
| 545 | 1.13.3 | **Alteração de estatutos** |  | 10.5d | 2018-09-07 | 2018-09-21 | 544 | 0d |  |  |  | 39.4h |
| 546 | 1.13.3.1 | **Analysys** |  | 1.5d | 2018-09-07 | 2018-09-10 |  | 1d | 0d |  |  | 3.6h |
| 547 | 1.13.3.1.1 | Execution |  | 1d | 2018-09-07 | 2018-09-10 |  | 1d | 0d | finish no earlier than 2018-02-05 | Ana Catarina Pacheco De Sousa [30%] | 2.4h |
| 548 | 1.13.3.1.2 | Testing |  | 0.5d | 2018-09-10 | 2018-09-10 | 547 | 1d |  | finish no earlier than 2018-02-05 | Pedro Duarte Neto [30%] | 1.2h |
| 549 | 1.13.3.2 | Analysys Completed | milestone | 0d | 2018-09-10 | 2018-09-10 | 546 | 1d | 0d | finish no earlier than 2018-02-05 |  |  |
| 550 | 1.13.3.3 | **Design** |  | 1.5d | 2018-09-10 | 2018-09-12 | 549 | 1d | 0d |  |  | 4.3h |
| 551 | 1.13.3.3.1 | Execution |  | 1d | 2018-09-10 | 2018-09-11 |  | 1d | 0d | finish no earlier than 2018-02-05 | Hugo Filipe Soares Veloso De Barros Curado [35%] | 2.8h |
| 552 | 1.13.3.3.2 | Testing |  | 0.5d | 2018-09-11 | 2018-09-12 | 551 | 1d |  | finish no earlier than 2018-02-05 | André Gonçalo Bernardo Nunes [37.5%] | 1.5h |
| 553 | 1.13.3.4 | Design Completed | milestone | 0d | 2018-09-12 | 2018-09-12 | 550 | 1d | 0d | finish no earlier than 2018-02-05 |  |  |

| ID | WBS | Task | Type | Duration | Start | Finish | Predecessors | Total slack | Free slack | Constraint | Resources | Work |
| --- | --- | --- | --- | --- | --- | --- | --- | --- | --- | --- | --- | --- |
| 554 | 1.13.3.5 | **Implementation** |  | 4d | 2018-09-12 | 2018-09-18 | 553 | 0d |  |  |  | 24.3h |
| 555 | 1.13.3.5.1 | **FrontEnd** |  | 2.5d | 2018-09-12 | 2018-09-14 |  | 1.5d |  |  |  | 11.1h |
| 556 | 1.13.3.5.1.1 | Develop controller |  | 0.5d | 2018-09-14 | 2018-09-14 | 558 | 1.5d |  | finish no earlier than 2018-02-05 | Ana Catarina Pacheco De Sousa [30%] | 1.2h |
| 557 | 1.13.3.5.1.2 | Develop view |  | 1.5d | 2018-09-12 | 2018-09-13 |  | 2.5d |  | finish no earlier than 2018-02-05 | André Gonçalo Bernardo Nunes [37.5%] | 4.5h |
| 558 | 1.13.3.5.1.3 | Add route to routes db |  | 1.5d | 2018-09-12 | 2018-09-14 |  | 1.5d | 0d | finish no earlier than 2018-02-05 | Patrícia Alexandra Dias De Jesus [45%] | 5.4h |
| 559 | 1.13.3.5.2 | FrontEnd Completed | milestone | 0d | 2018-09-12 | 2018-09-12 |  | 4d |  |  |  |  |
| 560 | 1.13.3.5.3 | **BackEnd** |  | 3d | 2018-09-12 | 2018-09-17 |  | 1d |  |  |  | 9.6h |
| 561 | 1.13.3.5.3.1 | Add route to routes file |  | 0.5d | 2018-09-12 | 2018-09-12 |  | 2d | 1d | finish no earlier than 2018-02-05 | Patrícia Alexandra Dias De Jesus [45%] | 1.8h |
| 562 | 1.13.3.5.3.2 | Develop Controller |  | 1.5d | 2018-09-13 | 2018-09-17 | 561, 563 | 1d |  | finish no earlier than 2018-02-05 | Hugo Filipe Soares Veloso De Barros Curado [35%] | 4.2h |
| 563 | 1.13.3.5.3.3 | Develop Model |  | 1.5d | 2018-09-12 | 2018-09-13 |  | 1d | 0d | finish no earlier than 2018-02-12 | Ana Catarina Pacheco De Sousa [30%] | 3.6h |
| 564 | 1.13.3.5.4 | BackEnd Completed | milestone | 0d | 2018-09-12 | 2018-09-12 |  | 4d |  |  |  |  |
| 565 | 1.13.3.5.5 | **Networking & Security** |  | 1d | 2018-09-17 | 2018-09-18 |  | 0d |  |  |  | 3.6h |
| 566 | 1.13.3.5.5.1 | General security procidures |  | 1d | 2018-09-17 | 2018-09-18 |  | 0d |  | finish no earlier than 2018-02-12 | Patrícia Alexandra Dias De Jesus [45%] | 3.6h |
| 567 | 1.13.3.5.6 | Networking & Security Completed | milestone | 0d | 2018-09-12 | 2018-09-12 |  | 4d |  |  |  |  |
| 568 | 1.13.3.6 | Implementation Completed | milestone | 0d | 2018-09-18 | 2018-09-18 | 554 | 0d |  | finish no earlier than 2018-02-12 |  |  |
| 569 | 1.13.3.7 | **Testing** |  | 1.5d | 2018-09-18 | 2018-09-19 | 568 | 0d |  |  |  | 3.6h |
| 570 | 1.13.3.7.1 | Building |  | 1d | 2018-09-18 | 2018-09-19 |  | 0d |  | finish no earlier than 2018-02-12 | Pedro Duarte Neto [30%] | 2.4h |
| 571 | 1.13.3.7.2 | Testing |  | 0.5d | 2018-09-19 | 2018-09-19 | 570 | 0d |  | finish no earlier than 2018-02-12 | Ana Catarina Pacheco De Sousa [30%] | 1.2h |
| 572 | 1.13.3.8 | Testing Completed | milestone | 0d | 2018-09-19 | 2018-09-19 | 569 | 0d |  | start no earlier than 2018-02-12 |  |  |
| 573 | 1.13.3.9 | Deployment |  | 1d | 2018-09-20 | 2018-09-21 | 572 | 0d |  | finish no earlier than 2018-02-13 | Patrícia Alexandra Dias De Jesus [45%] | 3.6h |
| 574 | 1.13.3.10 | Deployment Completed | milestone | 0d | 2018-09-21 | 2018-09-21 | 573 | 0d |  | start no earlier than 2018-02-05 |  |  |
| 575 | 1.13.4 | Alteração de estatutos Completed | milestone | 0d | 2018-09-21 | 2018-09-21 | 545 | 0d |  | start no earlier than 2018-02-13 |  |  |
| 576 | 1.13.5 | **Assosciar novo cartão no sistema** |  | 17.5d | 2018-08-28 | 2018-09-20 |  | 1d | 0d |  |  | 40.9h |
| 577 | 1.13.5.1 | **Analysys** |  | 1.5d | 2018-08-28 | 2018-08-29 |  | 9.42d | 0d |  |  | 3.6h |
| 578 | 1.13.5.1.1 | Execution |  | 1d | 2018-08-28 | 2018-08-29 |  | 9.42d | 0d | finish no earlier than 2018-02-05 | Ana Catarina Pacheco De Sousa [30%] | 2.4h |
| 579 | 1.13.5.1.2 | Testing |  | 0.5d | 2018-08-29 | 2018-08-29 | 578 | 9.42d |  | finish no earlier than 2018-02-05 | Pedro Duarte Neto [30%] | 1.2h |
| 580 | 1.13.5.2 | Analysys Completed | milestone | 0d | 2018-08-29 | 2018-08-29 | 577 | 9.42d | 0d | start no earlier than 2018-02-05 |  |  |

| ID | WBS | Task | Type | Duration | Start | Finish | Predecessors | Total slack | Free slack | Constraint | Resources | Work |
| --- | --- | --- | --- | --- | --- | --- | --- | --- | --- | --- | --- | --- |
| 581 | 1.13.5.3 | **Design** |  | 1.5d | 2018-08-29 | 2018-08-31 | 580 | 9.42d | 0d |  |  | 4.8h |
| 582 | 1.13.5.3.1 | Execution |  | 1d | 2018-08-29 | 2018-08-30 |  | 9.42d | 0d | finish no earlier than 2018-02-05 | André Gonçalo Bernardo Nunes [37.5%] | 3h |
| 583 | 1.13.5.3.2 | Testing |  | 0.5d | 2018-08-30 | 2018-08-31 | 582 | 9.42d |  | finish no earlier than 2018-02-05 | Patrícia Alexandra Dias De Jesus [45%] | 1.8h |
| 584 | 1.13.5.4 | Design Completed | milestone | 0d | 2018-08-31 | 2018-08-31 | 581 | 9.42d | 0d | start no earlier than 2018-02-05 |  |  |
| 585 | 1.13.5.5 | **Implementation** |  | 9.5d | 2018-08-31 | 2018-09-13 | 584 | 3.5d | 0d |  |  | 24.5h |
| 586 | 1.13.5.5.1 | **FrontEnd** |  | 9.5d | 2018-08-31 | 2018-09-13 |  | 3.5d |  |  |  | 11.3h |
| 587 | 1.13.5.5.1.1 | Develop controller |  | 0.5d | 2018-09-13 | 2018-09-13 | 589 | 3.5d |  | finish no earlier than 2018-02-05 | Hugo Filipe Soares Veloso De Barros Curado [35%] | 1.4h |
| 588 | 1.13.5.5.1.2 | Develop view |  | 1.5d | 2018-08-31 | 2018-09-03 |  | 11.5d |  | finish no earlier than 2018-02-05 | André Gonçalo Bernardo Nunes [37.5%] | 4.5h |
| 589 | 1.13.5.5.1.3 | Add route to routes db |  | 1.5d | 2018-09-07 | 2018-09-10 |  | 4.42d | 0d | finish no earlier than 2018-02-05 | Patrícia Alexandra Dias De Jesus [45%] | 5.4h |
| 590 | 1.13.5.5.2 | FrontEnd Completed | milestone | 0d | 2018-08-31 | 2018-08-31 |  | 13d |  |  |  |  |
| 591 | 1.13.5.5.3 | **BackEnd** |  | 3d | 2018-09-04 | 2018-09-07 |  | 8d |  |  |  | 10.8h |
| 592 | 1.13.5.5.3.1 | Add route to routes file |  | 0.5d | 2018-09-04 | 2018-09-04 |  | 9d | 1d | finish no earlier than 2018-02-05 | Ana Catarina Pacheco De Sousa [30%] | 1.2h |
| 593 | 1.13.5.5.3.2 | Develop Controller |  | 1.5d | 2018-09-05 | 2018-09-07 | 592, 594 | 8d |  | finish no earlier than 2018-02-05 | Hugo Filipe Soares Veloso De Barros Curado [35%] | 4.2h |
| 594 | 1.13.5.5.3.3 | Develop Model |  | 1.5d | 2018-09-04 | 2018-09-05 |  | 8d | 0d | finish no earlier than 2018-02-12 | Patrícia Alexandra Dias De Jesus [45%] | 5.4h |
| 595 | 1.13.5.5.4 | BackEnd Completed | milestone | 0d | 2018-08-31 | 2018-08-31 |  | 13d |  |  |  |  |
| 596 | 1.13.5.5.5 | **Networking & Security** |  | 1d | 2018-08-31 | 2018-09-03 |  | 12d |  |  |  | 2.4h |
| 597 | 1.13.5.5.5.1 | General security procidures |  | 1d | 2018-08-31 | 2018-09-03 |  | 12d |  | finish no earlier than 2018-02-12 | Pedro Duarte Neto [30%] | 2.4h |
| 598 | 1.13.5.5.6 | Networking & Security Completed | milestone | 0d | 2018-08-31 | 2018-08-31 |  | 13d |  |  |  |  |
| 599 | 1.13.5.6 | Implementation Completed | milestone | 0d | 2018-09-13 | 2018-09-13 | 585 | 3.5d | 2.5d | start no earlier than 2018-02-12 |  |  |
| 600 | 1.13.5.7 | **Testing** |  | 1.5d | 2018-09-18 | 2018-09-19 | 599 | 1d | 0d |  |  | 5h |
| 601 | 1.13.5.7.1 | Building |  | 1d | 2018-09-18 | 2018-09-19 |  | 1d | 0d | finish no earlier than 2018-02-12 | Patrícia Alexandra Dias De Jesus [45%] | 3.6h |
| 602 | 1.13.5.7.2 | Testing |  | 0.5d | 2018-09-19 | 2018-09-19 | 601 | 1d |  | finish no earlier than 2018-02-12 | Hugo Filipe Soares Veloso De Barros Curado [35%] | 1.4h |
| 603 | 1.13.5.8 | Testing Completed | milestone | 0d | 2018-09-19 | 2018-09-19 | 600 | 1d | 0d | start no earlier than 2018-02-12 |  |  |
| 604 | 1.13.5.9 | Deployment |  | 1d | 2018-09-19 | 2018-09-20 | 603 | 1d | 0d | finish no earlier than 2018-02-13 | André Gonçalo Bernardo Nunes [37.5%] | 3h |
| 605 | 1.13.5.10 | Deployment Completed | milestone | 0d | 2018-09-20 | 2018-09-20 | 604 | 1d |  | start no earlier than 2018-02-05 |  |  |
| 606 | 1.13.6 | Associar novo cartão no sistema Completed | milestone | 0d | 2018-09-20 | 2018-09-20 | 576 | 1d |  | start no earlier than 2018-02-13 |  |  |

| ID | WBS | Task | Type | Duration | Start | Finish | Predecessors | Total slack | Free slack | Constraint | Resources | Work |
| --- | --- | --- | --- | --- | --- | --- | --- | --- | --- | --- | --- | --- |
| 607 | 1.13.7 | **Alterar acesso a sala** |  | 16.5d | 2018-08-29 | 2018-09-20 |  | 1d | 0d |  |  | 38.8h |
| 608 | 1.13.7.1 | **Analysys** |  | 1.5d | 2018-08-29 | 2018-08-30 |  | 8d | 0d |  |  | 3.6h |
| 609 | 1.13.7.1.1 | Execution |  | 1d | 2018-08-29 | 2018-08-30 |  | 8d | 0d | finish no earlier than 2018-02-05 | Ana Catarina Pacheco De Sousa [30%] | 2.4h |
| 610 | 1.13.7.1.2 | Testing |  | 0.5d | 2018-08-30 | 2018-08-30 | 609 | 8d |  | finish no earlier than 2018-02-05 | Pedro Duarte Neto [30%] | 1.2h |
| 611 | 1.13.7.2 | Analysys Completed | milestone | 0d | 2018-08-30 | 2018-08-30 | 608 | 8d | 2d | start no earlier than 2018-02-05 |  |  |
| 612 | 1.13.7.3 | **Design** |  | 1.5d | 2018-09-03 | 2018-09-05 | 611 | 6d | 0d |  |  | 4.3h |
| 613 | 1.13.7.3.1 | Execution |  | 1d | 2018-09-03 | 2018-09-04 |  | 6d | 0d | finish no earlier than 2018-02-05 | Hugo Filipe Soares Veloso De Barros Curado [35%] | 2.8h |
| 614 | 1.13.7.3.2 | Testing |  | 0.5d | 2018-09-04 | 2018-09-05 | 613 | 6d |  | finish no earlier than 2018-02-05 | André Gonçalo Bernardo Nunes [37.5%] | 1.5h |
| 615 | 1.13.7.4 | Design Completed | milestone | 0d | 2018-09-05 | 2018-09-05 | 612 | 6d | 0d | start no earlier than 2018-02-05 |  |  |
| 616 | 1.13.7.5 | **Implementation** |  | 8d | 2018-09-05 | 2018-09-17 | 615 | 1d | 0d |  |  | 23.7h |
| 617 | 1.13.7.5.1 | **FrontEnd** |  | 7d | 2018-09-05 | 2018-09-14 |  | 2d |  |  |  | 11.1h |
| 618 | 1.13.7.5.1.1 | Develop controller |  | 0.5d | 2018-09-13 | 2018-09-14 | 620 | 2d |  | finish no earlier than 2018-02-05 | Ana Catarina Pacheco De Sousa [30%] | 1.2h |
| 619 | 1.13.7.5.1.2 | Develop view |  | 1.5d | 2018-09-05 | 2018-09-06 |  | 7.5d |  | finish no earlier than 2018-02-05 | André Gonçalo Bernardo Nunes [37.5%] | 4.5h |
| 620 | 1.13.7.5.1.3 | Add route to routes db |  | 1.5d | 2018-09-10 | 2018-09-12 |  | 2.92d | 0d | finish no earlier than 2018-02-05 | Patrícia Alexandra Dias De Jesus [45%] | 5.4h |
| 621 | 1.13.7.5.2 | FrontEnd Completed | milestone | 0d | 2018-09-05 | 2018-09-05 |  | 9d |  |  |  |  |
| 622 | 1.13.7.5.3 | **BackEnd** |  | 5.5d | 2018-09-05 | 2018-09-13 |  | 3d |  |  |  | 9h |
| 623 | 1.13.7.5.3.1 | Add route to routes file |  | 0.5d | 2018-09-05 | 2018-09-06 |  | 6.5d | 3.5d | finish no earlier than 2018-02-05 | Pedro Duarte Neto [30%] | 1.2h |
| 624 | 1.13.7.5.3.2 | Develop Controller |  | 1.5d | 2018-09-11 | 2018-09-13 | 623, 625 | 3d |  | finish no earlier than 2018-02-05 | Hugo Filipe Soares Veloso De Barros Curado [35%] | 4.2h |
| 625 | 1.13.7.5.3.3 | Develop Model |  | 1.5d | 2018-09-10 | 2018-09-11 |  | 3d | 0d | finish no earlier than 2018-02-12 | Ana Catarina Pacheco De Sousa [30%] | 3.6h |
| 626 | 1.13.7.5.4 | BackEnd Completed | milestone | 0d | 2018-09-05 | 2018-09-05 |  | 9d |  |  |  |  |
| 627 | 1.13.7.5.5 | **Networking & Security** |  | 1d | 2018-09-14 | 2018-09-17 |  | 1d |  |  |  | 3.6h |
| 628 | 1.13.7.5.5.1 | General security procidures |  | 1d | 2018-09-14 | 2018-09-17 |  | 1d |  | finish no earlier than 2018-02-12 | Patrícia Alexandra Dias De Jesus [45%] | 3.6h |
| 629 | 1.13.7.5.6 | Networking & Security Completed | milestone | 0d | 2018-09-05 | 2018-09-05 |  | 9d |  |  |  |  |
| 630 | 1.13.7.6 | Implementation Completed | milestone | 0d | 2018-09-17 | 2018-09-17 | 616 | 1d | 0d | start no earlier than 2018-02-12 |  |  |

| ID | WBS | Task | Type | Duration | Start | Finish | Predecessors | Total slack | Free slack | Constraint | Resources | Work |
| --- | --- | --- | --- | --- | --- | --- | --- | --- | --- | --- | --- | --- |
| 631 | 1.13.7.7 | **Testing** |  | 2.5d | 2018-09-17 | 2018-09-19 | 630 | 1d | 0d |  |  | 3.6h |
| 632 | 1.13.7.7.1 | Building |  | 1d | 2018-09-17 | 2018-09-18 |  | 1d | 0d | finish no earlier than 2018-02-12 | Ana Catarina Pacheco De Sousa [30%] | 2.4h |
| 633 | 1.13.7.7.2 | Testing |  | 0.5d | 2018-09-19 | 2018-09-19 | 632 | 1d |  | finish no earlier than 2018-02-12 | Pedro Duarte Neto [30%] | 1.2h |
| 634 | 1.13.7.8 | Testing Completed | milestone | 0d | 2018-09-19 | 2018-09-19 | 631 | 1d | 0d | start no earlier than 2018-02-12 |  |  |
| 635 | 1.13.7.9 | Deployment |  | 1d | 2018-09-19 | 2018-09-20 | 634 | 1d | 0d | finish no earlier than 2018-02-13 | Patrícia Alexandra Dias De Jesus [45%] | 3.6h |
| 636 | 1.13.7.10 | Deployment Completed | milestone | 0d | 2018-09-20 | 2018-09-20 | 635 | 1d |  | start no earlier than 2018-02-05 |  |  |
| 637 | 1.13.8 | Alterar acesso a salas Completed | milestone | 0d | 2018-09-20 | 2018-09-20 | 607 | 1d |  | start no earlier than 2018-02-13 |  |  |
| 638 | 1.14 | Sixth Iteration Completed | milestone | 0d | 2018-09-21 | 2018-09-21 | 513 | 0d |  | start no earlier than 2018-02-13 |  |  |
| 639 | 1.15 | **Final Deployment** |  | 1d | 2018-09-21 | 2018-09-24 | 638 | 0d |  |  |  | 14.2h |
| 640 | 1.15.1 | Deployment |  | 1d | 2018-09-21 | 2018-09-24 |  | 0d |  | start no earlier than 2018-02-05 | Ana Catarina Pacheco De Sousa [30%]; André Gonçalo Bernardo Nunes [37.5%]; Hugo Filipe Soares Veloso De Barros Curado [35%]; Patrícia Alexandra Dias De Jesus [45%]; Pedro Duarte Neto [30%] | 14.2h |
| 641 | 1.15.2 | Deployment Completed | milestone | 0d | 2018-09-24 | 2018-09-24 | 640 | 0d |  | finish no earlier than 2018-04-17 |  |  |
| 642 | 1.16 | Final Deplyment Completed | milestone | 0d | 2018-09-24 | 2018-09-24 | 639 | 0d |  | finish no earlier than 2018-04-17 |  |  |
| 643 | 2 | Final Project Completed | milestone | 0d | 2018-09-24 | 2018-09-24 | 1 | 0d |  | finish no earlier than 2018-04-17 |  |  |
